# 20151005_Plan de Proyecto_Megacable

Schedule from MS Project, 2015-10-05 to 2016-02-24, A marks actual dates.

## Calendars

- Standard: Mon-Fri 08:00-12:00, 13:00-17:00; Sat-Sun off. Exceptions (off unless hours are given): 2015-11-16 (Holiday - Día de la Revolución), 2015-12-24 to 2016-01-01 (Holiday - Christmas Season), 2016-02-01 (Holiday - Constitución).

## Resources

| Resource |
| --- |
| Megacable |
| Guillermo |
| e |
| Eduardo |
| Hansel |
| Connie |

## Schedule

| ID | WBS | Task | Duration | Start | Finish | Predecessors | Complete | Remaining | Total slack | Free slack | Constraint | Resources | Work | Actual work |
| --- | --- | --- | --- | --- | --- | --- | --- | --- | --- | --- | --- | --- | --- | --- |
| 1 | 1 | **2a Etapa Megacable** | 94d | 2015-10-05 A | 2016-02-24 |  | 45% | 51.88d | 0d |  |  |  | 1872h | 638h |
| 2 | 1.1 | **Eventos especiales** | 35d | 2015-10-05 A | 2015-11-23 |  | 51% | 17.25d | 59d |  |  |  | 280h | 142h |
| 3 | 1.1.1 | Playback Requerimiento | 1d | 2015-10-05 A | 2015-10-05 A |  | 100% |  |  |  | start no earlier than 2015-10-05 | Guillermo | 8h | 8h |
| 4 | 1.1.2 | Confirmación Requerimiento | 1d | 2015-10-06 A | 2015-10-06 A | 3 | 100% |  |  |  |  | Megacable | 8h | 8h |
| 5 | 1.1.3 | **Generar los Cortes** | 15d | 2015-10-07 A | 2015-10-27 |  | 75% | 3.75d | 77d |  |  |  | 120h | 90h |
| 6 | 1.1.3.1 | Diseño y Lógica del Corte Especial | 1d | 2015-10-07 A | 2015-10-07 A | 4 | 100% |  |  |  |  | Guillermo | 8h | 8h |
| 7 | 1.1.3.2 | Desarrollo | 10d | 2015-10-08 A | 2015-10-21 A | 6 | 100% |  |  |  |  | Guillermo | 80h | 80h |
| 8 | 1.1.3.3 | Pruebas Unitarias | 1d | 2015-10-22 A | 2015-10-22 | 7 | 25% | 0.75d | 77d | 0d |  | Guillermo | 8h | 2h |
| 9 | 1.1.3.4 | Corrección de Defectos | 3d | 2015-10-23 | 2015-10-27 | 8 |  |  | 77d |  |  | Guillermo | 24h |  |
| 10 | 1.1.4 | **Venta Evento Especial** | 18d | 2015-10-28 A | 2015-11-23 |  | 25% | 13.5d | 59d |  |  |  | 144h | 36h |
| 11 | 1.1.4.1 | Desarrollar Reglas de Negocio | 2d | 2015-10-28 A | 2015-10-29 A | 9 | 100% |  |  |  |  | Megacable | 16h | 16h |
| 12 | 1.1.4.2 | Ajuste al Sistema de Prioridades | 2d | 2015-10-30 A | 2015-11-02 A | 11 | 100% |  |  |  |  | Guillermo | 16h | 16h |
| 13 | 1.1.4.3 | Pruebas Unitarias | 1d | 2015-11-03 A | 2015-11-03 | 12 | 50% | 0.5d | 59d | 0d |  | Guillermo | 8h | 4h |
| 14 | 1.1.4.4 | Corrección de Defectos | 3d | 2015-11-04 | 2015-11-06 | 13 |  |  | 59d | 0d |  | Guillermo | 24h |  |
| 15 | 1.1.4.5 | Interfase de Venta | 10d | 2015-11-09 | 2015-11-23 | 14 |  |  | 59d |  |  | Guillermo | 80h |  |
| 16 | 1.2 | **Paquete** | 43d | 2015-11-24 A | 2016-02-02 |  | 47% | 22.8d | 0d |  |  |  | 344h | 161.6h |
| 17 | 1.2.1 | Playback Requerimiento | 1d | 2015-11-24 A | 2015-11-24 A | 15 | 100% |  |  |  |  | Guillermo | 8h | 8h |
| 18 | 1.2.2 | Confirmación Requerimiento | 1d | 2015-11-25 A | 2015-11-25 A | 17 | 100% |  |  |  |  | Guillermo | 8h | 8h |
| 19 | 1.2.3 | **Diseño Paquete** | 17d | 2015-11-26 A | 2015-12-18 |  | 59% | 6.9d | 0.85d |  |  |  | 136h | 80.8h |
| 20 | 1.2.3.1 | Diseño | 1d | 2015-11-26 A | 2015-11-26 A | 18 | 100% |  |  |  |  | Guillermo | 8h | 8h |
| 21 | 1.2.3.2 | Reglas y campos de cada Producto | 2d | 2015-11-27 A | 2015-11-30 | 20 | 75% | 0.5d | 7.5d | 0d |  | Megacable | 16h | 12h |
| 22 | 1.2.3.3 | Desarrollo | 10d | 2015-12-01 A | 2015-12-14 | 21 | 75% | 2.5d | 0.1d | 0d |  | Guillermo | 80h | 60h |
| 23 | 1.2.3.4 | Pruebas Unitarias | 1d | 2015-12-15 A | 2015-12-15 | 22 | 10% | 0.9d | 0.85d | 0d |  | Guillermo | 8h | 0.8h |
| 24 | 1.2.3.5 | Corrección de Defectos | 3d | 2015-12-16 | 2015-12-18 | 23 |  |  | 0.85d | 0d |  | Guillermo | 24h |  |

| ID | WBS | Task | Duration | Start | Finish | Predecessors | Complete | Remaining | Total slack | Free slack | Constraint | Resources | Work | Actual work |
| --- | --- | --- | --- | --- | --- | --- | --- | --- | --- | --- | --- | --- | --- | --- |
| 25 | 1.2.4 | **Venta Paquete** | 21d | 2015-12-21 A | 2016-01-27 |  | 39% | 12.9d | 0d |  |  |  | 168h | 64.8h |
| 26 | 1.2.4.1 | **Definición** | 7d | 2015-12-21 A | 2016-01-07 |  | 16% | 5.9d | 7d |  |  |  | 56h | 8.8h |
| 27 | 1.2.4.1.1 | Reglas de Interfase de Venta | 1d | 2015-12-21 A | 2015-12-21 | 24 | 85% | 0.15d | 0.25d | 0d |  | Megacable | 8h | 6.8h |
| 28 | 1.2.4.1.2 | Reglas para mapear Productos | 1d | 2015-12-22 A | 2015-12-22 | 27 | 25% | 0.75d | 7d | 0d |  | Megacable | 8h | 2h |
| 29 | 1.2.4.1.3 | Implementar las reglas de Venta | 5d | 2015-12-23 | 2016-01-07 | 28 |  |  | 7d | 0d |  | Guillermo | 40h |  |
| 30 | 1.2.4.2 | Desarrollo | 10d | 2016-01-08 A | 2016-01-21 | 29 | 70% | 3d | 0d |  |  | Guillermo | 80h | 56h |
| 31 | 1.2.4.3 | Pruebas Unitarias | 1d | 2016-01-22 | 2016-01-22 | 30 |  |  | 0d |  |  | Guillermo | 8h |  |
| 32 | 1.2.4.4 | Corrección de Defectos | 3d | 2016-01-25 | 2016-01-27 | 31 |  |  | 0d |  |  | Guillermo | 24h |  |
| 33 | 1.2.5 | Ajuste de nueva Interfase | 3d | 2016-01-28 | 2016-02-02 | 32 |  |  | 0d |  |  | Guillermo | 24h |  |
| 34 | 1.3 | **Intercambios** | 25d | 2015-10-05 A | 2015-11-06 |  | 55% | 11.2d | 2d |  |  |  | 200h | 110.4h |
| 35 | 1.3.1 | Análisis del Requerimiento | 2d | 2015-10-05 A | 2015-10-06 |  | 70% | 0.6d | 0.7d | 0d | start no earlier than 2015-10-05 | Eduardo | 16h | 11.2h |
| 36 | 1.3.2 | Playback del Requerimiento | 1d | 2015-10-07 A | 2015-10-07 | 35 | 70% | 0.3d | 1.8d | 0d |  | Eduardo | 8h | 5.6h |
| 37 | 1.3.3 | Confirmación Requerimiento | 1d | 2015-10-08 | 2015-10-08 | 36 |  |  | 1.8d | 0d |  | Eduardo | 8h |  |
| 38 | 1.3.4 | Diseño y Lógica de Intercambios | 3d | 2015-10-09 A | 2015-10-13 | 37 | 60% | 1.2d | 2.8d | 0d |  | Eduardo | 24h | 14.4h |
| 39 | 1.3.5 | Reglas | 4d | 2015-10-14 A | 2015-10-19 | 38 | 70% | 1.2d | 7d | 0d |  | Eduardo | 32h | 22.4h |
| 40 | 1.3.6 | Desarrollo | 10d | 2015-10-20 A | 2015-11-02 | 39 | 70% | 3d | 0.1d | 0d |  | Eduardo | 80h | 56h |
| 41 | 1.3.7 | Pruebas Unitarias | 1d | 2015-11-03 A | 2015-11-03 | 40 | 10% | 0.9d | 2d | 0d |  | Eduardo | 8h | 0.8h |
| 42 | 1.3.8 | Corrección de Defectos | 3d | 2015-11-04 | 2015-11-06 | 41 |  |  | 2d | 0d |  | Eduardo | 24h |  |
| 43 | 1.4 | **Pautado** | 21d | 2015-10-05 A | 2015-11-02 |  | 93% | 1.5d | 73d |  |  |  | 168h | 156h |
| 44 | 1.4.1 | Playback Requerimiento | 2d | 2015-10-05 A | 2015-10-06 A |  | 100% |  |  |  | start no earlier than 2015-10-05 | Hansel | 16h | 16h |
| 45 | 1.4.2 | Confirmación Requerimiento | 2d | 2015-10-07 A | 2015-10-08 A | 44 | 100% |  |  |  |  | Megacable | 16h | 16h |
| 46 | 1.4.3 | Diseño Pautado | 3d | 2015-10-09 A | 2015-10-13 A | 45 | 100% |  |  |  |  | Hansel | 24h | 24h |
| 47 | 1.4.4 | Desarrollo | 10d | 2015-10-14 A | 2015-10-27 A | 46 | 100% |  |  |  |  | Hansel | 80h | 80h |
| 48 | 1.4.5 | Pruebas Unitarias | 1d | 2015-10-28 A | 2015-10-28 A | 47 | 100% |  |  |  |  | Hansel | 8h | 8h |
| 49 | 1.4.6 | Corrección de Defectos | 3d | 2015-10-29 A | 2015-11-02 | 48 | 50% | 1.5d | 73d |  |  | Hansel | 24h | 12h |

| ID | WBS | Task | Duration | Start | Finish | Predecessors | Complete | Remaining | Total slack | Free slack | Resources | Work | Actual work |
| --- | --- | --- | --- | --- | --- | --- | --- | --- | --- | --- | --- | --- | --- |
| 50 | 1.5 | **Sistema de comisiones** | 27d | 2015-11-09 A | 2015-12-16 |  | 31% | 18.5d | 26d |  |  | 216h | 68h |
| 51 | 1.5.1 | Análisis del Requerimiento | 4d | 2015-11-09 A | 2015-11-12 | 42 | 50% | 2d | 0.5d | 0d | Eduardo | 32h | 16h |
| 52 | 1.5.2 | Playback del Requerimiento | 1d | 2015-11-13 A | 2015-11-13 | 51 | 50% | 0.5d | 1.5d | 0d | Eduardo | 8h | 4h |
| 53 | 1.5.3 | Confirmación Requerimiento | 1d | 2015-11-17 | 2015-11-17 | 52 |  |  | 1.5d | 0d | Eduardo | 8h |  |
| 54 | 1.5.4 | Diseño y Lógica de Sistema de Comisiones | 3d | 2015-11-18 A | 2015-11-20 | 53 | 50% | 1.5d | 2d | 0d | Eduardo | 24h | 12h |
| 55 | 1.5.5 | Reglas | 4d | 2015-11-23 A | 2015-11-26 | 54 | 50% | 2d | 2.5d | 0d | Eduardo | 32h | 16h |
| 56 | 1.5.6 | Desarrollo | 10d | 2015-11-27 A | 2015-12-10 | 55 | 25% | 7.5d | 26d | 0d | Eduardo | 80h | 20h |
| 57 | 1.5.7 | Pruebas Unitarias | 1d | 2015-12-11 | 2015-12-11 | 56 |  |  | 26d | 0d | Eduardo | 8h |  |
| 58 | 1.5.8 | Corrección de Defectos | 3d | 2015-12-14 | 2015-12-16 | 57 |  |  | 26d |  | Eduardo | 24h |  |
| 59 | 1.6 | **Ciclo 1 Pruebas Integrales** | 5d | 2016-02-03 | 2016-02-09 |  |  |  | 0d |  |  | 152h |  |
| 60 | 1.6.1 | Data Set Ciclo 1 Listo por Módulo | 1d | 2016-02-03 | 2016-02-03 | 58, 33 |  |  | 0d |  | Megacable | 8h |  |
| 61 | 1.6.2 | Carga de datos por módulo | 1d | 2016-02-04 | 2016-02-04 | 60 |  |  | 0d |  | Hansel; Eduardo; Guillermo | 24h |  |
| 62 | 1.6.3 | Prueba Punta a Punta | 1d | 2016-02-05 | 2016-02-05 | 61 |  |  | 0d |  | Hansel; Eduardo; Guillermo | 24h |  |
| 63 | 1.6.4 | Gestión de Defectos en Datos y Módulos - 1 | 3d | 2016-02-05 | 2016-02-09 | 62SS |  |  | 0d |  | Hansel; Eduardo; Guillermo | 72h |  |
| 64 | 1.6.5 | Informe de Resultados | 1d | 2016-02-09 | 2016-02-09 | 63FF |  |  | 0d |  | Hansel; Eduardo; Guillermo | 24h |  |
| 65 | 1.7 | **Ciclo 2 Pruebas Integrales** | 5d | 2016-02-10 | 2016-02-16 |  |  |  | 0d |  |  | 168h |  |
| 66 | 1.7.1 | Data Set Ciclo 1 Listo por Módulo | 1d | 2016-02-10 | 2016-02-10 | 64 |  |  | 0d |  | Hansel; Eduardo; Guillermo | 24h |  |
| 67 | 1.7.2 | Carga de datos por módulo | 1d | 2016-02-11 | 2016-02-11 | 66 |  |  | 0d |  | Hansel; Eduardo; Guillermo | 24h |  |
| 68 | 1.7.3 | Prueba Punta a Punta | 1d | 2016-02-12 | 2016-02-12 | 67 |  |  | 0d |  | Hansel; Eduardo; Guillermo | 24h |  |
| 69 | 1.7.4 | Gestión de Defectos en Datos y Módulos - 1 | 3d | 2016-02-12 | 2016-02-16 | 68SS |  |  | 0d |  | Hansel; Eduardo; Guillermo | 72h |  |
| 70 | 1.7.5 | Informe de Resultados | 1d | 2016-02-16 | 2016-02-16 | 69FF |  |  | 0d |  | Hansel; Eduardo; Guillermo | 24h |  |
| 71 | 1.8 | **Ciclo UAT** | 3d | 2016-02-17 | 2016-02-19 |  |  |  | 0d |  |  | 160h |  |
| 72 | 1.8.1 | Data Set Ciclo 1 Listo por Módulo | 1d | 2016-02-17 | 2016-02-17 | 70 |  |  | 0d |  | Hansel; Eduardo; Guillermo; Megacable | 32h |  |
| 73 | 1.8.2 | Carga de datos por módulo | 1d | 2016-02-18 | 2016-02-18 | 72 |  |  | 0d |  | Hansel; Eduardo; Guillermo; Megacable | 32h |  |
| 74 | 1.8.3 | Prueba Punta a Punta | 1d | 2016-02-19 | 2016-02-19 | 73 |  |  | 0d |  | Hansel; Eduardo; Guillermo; Megacable | 32h |  |
| 75 | 1.8.4 | Gestión de Defectos en Datos y Módulos - 1 | 1d | 2016-02-19 | 2016-02-19 | 74SS |  |  | 0d |  | Hansel; Eduardo; Guillermo; Megacable | 32h |  |
| 76 | 1.8.5 | Informe de Resultados | 1d | 2016-02-19 | 2016-02-19 | 75FF |  |  | 0d |  | Hansel; Eduardo; Guillermo; Megacable | 32h |  |
| 77 | 1.9 | Training | 5d | 2016-02-10 | 2016-02-16 | 66SS |  |  | 4d |  | Hansel; Eduardo; Guillermo | 120h |  |
| 78 | 1.10 | Cutover | 1d | 2016-02-22 | 2016-02-22 | 76 |  |  | 0d |  | Hansel; Eduardo; Guillermo | 24h |  |
| 79 | 1.11 | Go Live (1 Sistema) | 1d | 2016-02-23 | 2016-02-23 | 78, 77 |  |  | 0d |  | Hansel; Eduardo; Guillermo; Megacable | 32h |  |
| 80 | 1.12 | Handover Protocol | 1d | 2016-02-24 | 2016-02-24 | 79 |  |  | 0d |  | Connie | 8h |  |
