# 20151214_Plan de Proyecto_Megacable

Schedule from MS Project, 2015-10-05 to 2016-02-24, A marks actual dates.

## Calendars

- Standard: Mon-Fri 08:00-12:00, 13:00-17:00; Sat-Sun off. Exceptions (off unless hours are given): 2015-11-16 (Holiday - Día de la Revolución), 2015-12-24 to 2016-01-01 (Holiday - Christmas Season), 2016-02-01 (Holiday - Constitución).

## Resources

| Resource |
| --- |
| Megacable |
| Guillermo |
| e |
| Eduardo |
| Hansel |
| Connie |
| Pablo |

## Schedule

| ID | WBS | Task | Duration | Start | Finish | Predecessors | Complete | Remaining | Total slack | Constraint | Resources | Work | Actual work |
| --- | --- | --- | --- | --- | --- | --- | --- | --- | --- | --- | --- | --- | --- |
| 1 | 1 | **2a Etapa Megacable** | 94d | 2015-10-05 A | 2016-02-24 |  | 65% | 32.75d | 0d |  |  | 2720h | 1480.32h |
| 2 | 1.1 | **Eventos especiales** | 35d | 2015-10-05 A | 2015-11-23 A |  | 100% |  |  |  |  | 280h | 280h |
| 3 | 1.1.1 | Playback Requerimiento | 1d | 2015-10-05 A | 2015-10-05 A |  | 100% |  |  | start no earlier than 2015-10-05 | Guillermo | 8h | 8h |
| 4 | 1.1.2 | Confirmación Requerimiento | 1d | 2015-10-06 A | 2015-10-06 A | 3 | 100% |  |  |  | Megacable | 8h | 8h |
| 5 | 1.1.3 | **Generar los Cortes** | 15d | 2015-10-07 A | 2015-10-27 A |  | 100% |  |  |  |  | 120h | 120h |
| 6 | 1.1.3.1 | Diseño y Lógica del Corte Especial | 1d | 2015-10-07 A | 2015-10-07 A | 4 | 100% |  |  |  | Guillermo | 8h | 8h |
| 7 | 1.1.3.2 | Desarrollo | 10d | 2015-10-08 A | 2015-10-21 A | 6 | 100% |  |  |  | Guillermo | 80h | 80h |
| 8 | 1.1.3.3 | Pruebas Unitarias | 1d | 2015-10-22 A | 2015-10-22 A | 7 | 100% |  |  |  | Guillermo | 8h | 8h |
| 9 | 1.1.3.4 | Corrección de Defectos | 3d | 2015-10-23 A | 2015-10-27 A | 8 | 100% |  |  |  | Guillermo | 24h | 24h |
| 10 | 1.1.4 | **Venta Evento Especial** | 18d | 2015-10-28 A | 2015-11-23 A |  | 100% |  |  |  |  | 144h | 144h |
| 11 | 1.1.4.1 | Desarrollar Reglas de Negocio | 2d | 2015-10-28 A | 2015-10-29 A | 9 | 100% |  |  |  | Megacable | 16h | 16h |
| 12 | 1.1.4.2 | Ajuste al Sistema de Prioridades | 2d | 2015-10-30 A | 2015-11-02 A | 11 | 100% |  |  |  | Guillermo | 16h | 16h |
| 13 | 1.1.4.3 | Pruebas Unitarias | 1d | 2015-11-03 A | 2015-11-03 A | 12 | 100% |  |  |  | Guillermo | 8h | 8h |
| 14 | 1.1.4.4 | Corrección de Defectos | 3d | 2015-11-04 A | 2015-11-06 A | 13 | 100% |  |  |  | Guillermo | 24h | 24h |
| 15 | 1.1.4.5 | Interfase de Venta | 10d | 2015-11-09 A | 2015-11-23 A | 14 | 100% |  |  |  | Guillermo | 80h | 80h |
| 16 | 1.2 | **Paquete** | 43d | 2015-11-24 A | 2016-02-02 |  | 81% | 8.2d | 0d |  |  | 344h | 278.4h |
| 17 | 1.2.1 | Playback Requerimiento | 1d | 2015-11-24 A | 2015-11-24 A | 15 | 100% |  |  |  | Guillermo | 8h | 8h |
| 18 | 1.2.2 | Confirmación Requerimiento | 1d | 2015-11-25 A | 2015-11-25 A | 17 | 100% |  |  |  | Guillermo | 8h | 8h |
| 19 | 1.2.3 | **Diseño Paquete** | 17d | 2015-11-26 A | 2015-12-18 A |  | 100% |  |  |  |  | 136h | 136h |
| 20 | 1.2.3.1 | Diseño | 1d | 2015-11-26 A | 2015-11-26 A | 18 | 100% |  |  |  | Guillermo | 8h | 8h |
| 21 | 1.2.3.2 | Reglas y campos de cada Producto | 2d | 2015-11-27 A | 2015-11-30 A | 20 | 100% |  |  |  | Megacable | 16h | 16h |
| 22 | 1.2.3.3 | Desarrollo | 10d | 2015-12-01 A | 2015-12-14 A | 21 | 100% |  |  |  | Guillermo | 80h | 80h |
| 23 | 1.2.3.4 | Pruebas Unitarias | 1d | 2015-12-15 A | 2015-12-15 A | 22 | 100% |  |  |  | Guillermo | 8h | 8h |
| 24 | 1.2.3.5 | Corrección de Defectos | 3d | 2015-12-16 A | 2015-12-18 A | 23 | 100% |  |  |  | Guillermo | 24h | 24h |

| ID | WBS | Task | Duration | Start | Finish | Predecessors | Complete | Remaining | Total slack | Free slack | Constraint | Resources | Work | Actual work |
| --- | --- | --- | --- | --- | --- | --- | --- | --- | --- | --- | --- | --- | --- | --- |
| 25 | 1.2.4 | **Venta Paquete** | 21d | 2015-12-21 A | 2016-01-27 |  | 64% | 7.6d | 2.4d |  |  |  | 168h | 107.2h |
| 26 | 1.2.4.1 | **Definición** | 7d | 2015-12-21 A | 2016-01-07 |  | 77% | 1.6d | 6d |  |  |  | 56h | 43.2h |
| 27 | 1.2.4.1.1 | Reglas de Interfase de Venta | 1d | 2015-12-21 A | 2015-12-21 | 24 | 95% | 0.05d | 0.95d | 0d |  | Megacable | 8h | 7.6h |
| 28 | 1.2.4.1.2 | Reglas para mapear Productos | 1d | 2015-12-22 A | 2015-12-22 | 27 | 95% | 0.05d | 3.5d | 0d |  | Megacable | 8h | 7.6h |
| 29 | 1.2.4.1.3 | Implementar las reglas de Venta | 5d | 2015-12-23 A | 2016-01-07 | 28 | 70% | 1.5d | 6d | 0d |  | Guillermo | 40h | 28h |
| 30 | 1.2.4.2 | Desarrollo | 10d | 2016-01-08 A | 2016-01-21 | 29 | 60% | 4d | 0.5d | 0d |  | Guillermo | 80h | 48h |
| 31 | 1.2.4.3 | Pruebas Unitarias | 1d | 2016-01-22 A | 2016-01-22 | 30 | 50% | 0.5d | 1.5d | 0d |  | Guillermo | 8h | 4h |
| 32 | 1.2.4.4 | Corrección de Defectos | 3d | 2016-01-25 A | 2016-01-27 | 31 | 50% | 1.5d | 2.4d | 0d |  | Guillermo | 24h | 12h |
| 33 | 1.2.5 | Ajuste de nueva Interfase | 3d | 2016-01-28 A | 2016-02-02 | 32 | 80% | 0.6d | 0d |  |  | Guillermo | 24h | 19.2h |
| 34 | 1.3 | **Intercambios** | 25d | 2015-10-05 A | 2015-11-06 |  | 73% | 6.7d | 2.8d |  |  |  | 200h | 146.4h |
| 35 | 1.3.1 | Análisis del Requerimiento | 2d | 2015-10-05 A | 2015-10-06 A |  | 100% |  |  |  | start no earlier than 2015-10-05 | Eduardo | 16h | 16h |
| 36 | 1.3.2 | Playback del Requerimiento | 1d | 2015-10-07 A | 2015-10-07 A | 35 | 100% |  |  |  |  | Eduardo | 8h | 8h |
| 37 | 1.3.3 | Confirmación Requerimiento | 1d | 2015-10-08 A | 2015-10-08 | 36 | 10% | 0.9d | 2.25d | 0d |  | Eduardo | 8h | 0.8h |
| 38 | 1.3.4 | Diseño y Lógica de Intercambios | 3d | 2015-10-09 A | 2015-10-13 | 37 | 75% | 0.75d | 3.6d | 0d |  | Eduardo | 24h | 18h |
| 39 | 1.3.5 | Reglas | 4d | 2015-10-14 A | 2015-10-19 | 38 | 90% | 0.4d | 9d | 0d |  | Eduardo | 32h | 28.8h |
| 40 | 1.3.6 | Desarrollo | 10d | 2015-10-20 A | 2015-11-02 | 39 | 90% | 1d | 0.35d | 0d |  | Eduardo | 80h | 72h |
| 41 | 1.3.7 | Pruebas Unitarias | 1d | 2015-11-03 A | 2015-11-03 | 40 | 35% | 0.65d | 2.8d | 0d |  | Eduardo | 8h | 2.8h |
| 42 | 1.3.8 | Corrección de Defectos | 3d | 2015-11-04 | 2015-11-06 | 41 |  |  | 2.8d | 0d |  | Eduardo | 24h |  |
| 43 | 1.4 | **Pautado** | 21d | 2015-10-05 A | 2015-11-02 A |  | 100% |  |  |  |  |  | 168h | 168h |
| 44 | 1.4.1 | Playback Requerimiento | 2d | 2015-10-05 A | 2015-10-06 A |  | 100% |  |  |  | start no earlier than 2015-10-05 | Hansel | 16h | 16h |
| 45 | 1.4.2 | Confirmación Requerimiento | 2d | 2015-10-07 A | 2015-10-08 A | 44 | 100% |  |  |  |  | Megacable | 16h | 16h |
| 46 | 1.4.3 | Diseño Pautado | 3d | 2015-10-09 A | 2015-10-13 A | 45 | 100% |  |  |  |  | Hansel | 24h | 24h |
| 47 | 1.4.4 | Desarrollo | 10d | 2015-10-14 A | 2015-10-27 A | 46 | 100% |  |  |  |  | Hansel | 80h | 80h |
| 48 | 1.4.5 | Pruebas Unitarias | 1d | 2015-10-28 A | 2015-10-28 A | 47 | 100% |  |  |  |  | Hansel | 8h | 8h |
| 49 | 1.4.6 | Corrección de Defectos | 3d | 2015-10-29 A | 2015-11-02 A | 48 | 100% |  |  |  |  | Hansel | 24h | 24h |

| ID | WBS | Task | Duration | Start | Finish | Predecessors | Complete | Remaining | Total slack | Free slack | Resources | Work | Actual work |
| --- | --- | --- | --- | --- | --- | --- | --- | --- | --- | --- | --- | --- | --- |
| 50 | 1.5 | **Materiales** | 27d | 2015-11-09 A | 2015-12-16 A |  | 100% |  |  |  |  | 216h | 216h |
| 51 | 1.5.1 | Análisis del Requerimiento | 4d | 2015-11-09 A | 2015-11-12 A | 42 | 100% |  |  |  | Pablo | 32h | 32h |
| 52 | 1.5.2 | Playback del Requerimiento | 1d | 2015-11-13 A | 2015-11-13 A | 51 | 100% |  |  |  | Pablo | 8h | 8h |
| 53 | 1.5.3 | Confirmación Requerimiento | 1d | 2015-11-17 A | 2015-11-17 A | 52 | 100% |  |  |  | Pablo | 8h | 8h |
| 54 | 1.5.4 | Diseño y Lógica de Sistema de Materiales | 3d | 2015-11-18 A | 2015-11-20 A | 53 | 100% |  |  |  | Pablo | 24h | 24h |
| 55 | 1.5.5 | Reglas | 4d | 2015-11-23 A | 2015-11-26 A | 54 | 100% |  |  |  | Pablo | 32h | 32h |
| 56 | 1.5.6 | Desarrollo | 10d | 2015-11-27 A | 2015-12-10 A | 55 | 100% |  |  |  | Pablo | 80h | 80h |
| 57 | 1.5.7 | Pruebas Unitarias | 1d | 2015-12-11 A | 2015-12-11 A | 56 | 100% |  |  |  | Pablo | 8h | 8h |
| 58 | 1.5.8 | Corrección de Defectos | 3d | 2015-12-14 A | 2015-12-16 A | 57 | 100% |  |  |  | Pablo | 24h | 24h |
| 59 | 1.6 | **Versionado** | 22d | 2015-12-17 A | 2016-01-26 A |  | 100% |  |  |  |  | 160h | 160h |
| 60 | 1.6.1 | Análisis del Requerimiento | 4d | 2015-12-17 A | 2015-12-22 A | 58 | 100% |  |  |  | Pablo | 32h | 32h |
| 61 | 1.6.2 | Playback del Requerimiento | 1d | 2015-12-23 A | 2015-12-23 A | 60 | 100% |  |  |  | Pablo | 8h | 8h |
| 62 | 1.6.3 | Confirmación Requerimiento | 1d | 2016-01-04 A | 2016-01-04 A | 61 | 100% |  |  |  | Pablo | 8h | 8h |
| 63 | 1.6.4 | Diseño y Lógica de Sistema de versionado | 3d | 2016-01-05 A | 2016-01-07 A | 62 | 100% |  |  |  | Pablo | 24h | 24h |
| 64 | 1.6.5 | Reglas | 2d | 2016-01-08 A | 2016-01-11 A | 63 | 100% |  |  |  | Pablo | 16h | 16h |
| 65 | 1.6.6 | Desarrollo | 5d | 2016-01-14 A | 2016-01-20 A | 64 | 100% |  |  |  | Pablo | 40h | 40h |
| 66 | 1.6.7 | Pruebas Unitarias | 1d | 2016-01-21 A | 2016-01-21 A | 65 | 100% |  |  |  | Pablo | 8h | 8h |
| 67 | 1.6.8 | Corrección de Defectos | 3d | 2016-01-22 A | 2016-01-26 A | 66 | 100% |  |  |  | Pablo | 24h | 24h |
| 68 | 1.7 | **Sistema de comisiones** | 27d | 2015-11-09 A | 2015-12-16 |  | 47% | 14.35d | 1.4d | 0d |  | 216h | 101.2h |
| 69 | 1.7.1 | Análisis del Requerimiento | 4d | 2015-11-09 A | 2015-11-12 | 42 | 70% | 1.2d | 0.7d | 0d | Eduardo | 32h | 22.4h |
| 70 | 1.7.2 | Playback del Requerimiento | 1d | 2015-11-13 A | 2015-11-13 | 69 | 70% | 0.3d | 0.7d | 0d | Eduardo | 8h | 5.6h |
| 71 | 1.7.3 | Confirmación Requerimiento | 1d | 2015-11-17 A | 2015-11-17 | 70 | 70% | 0.3d | 2.1d | 0d | Eduardo | 8h | 5.6h |
| 72 | 1.7.4 | Diseño y Lógica de Sistema de Comisiones | 3d | 2015-11-18 A | 2015-11-20 | 71 | 70% | 0.9d | 2.8d | 0d | Eduardo | 24h | 16.8h |
| 73 | 1.7.5 | Reglas | 4d | 2015-11-23 A | 2015-11-26 | 72 | 70% | 1.2d | 3d | 0d | Eduardo | 32h | 22.4h |
| 74 | 1.7.6 | Desarrollo | 10d | 2015-11-27 A | 2015-12-10 | 73 | 30% | 7d | 0.25d | 0d | Eduardo | 80h | 24h |
| 75 | 1.7.7 | Pruebas Unitarias | 1d | 2015-12-11 A | 2015-12-11 | 74 | 25% | 0.75d | 0.3d | 0d | Eduardo | 8h | 2h |
| 76 | 1.7.8 | Corrección de Defectos | 3d | 2015-12-14 A | 2015-12-16 | 75 | 10% | 2.7d | 1.4d |  | Eduardo | 24h | 2.4h |

| ID | WBS | Task | Duration | Start | Finish | Predecessors | Complete | Remaining | Total slack | Free slack | Resources | Work | Actual work |
| --- | --- | --- | --- | --- | --- | --- | --- | --- | --- | --- | --- | --- | --- |
| 77 | 1.8 | **Facturación** | 27d | 2015-11-09 A | 2015-12-16 |  | 44% | 15.12d | 1.5d |  |  | 216h | 95.04h |
| 78 | 1.8.1 | Análisis del Requerimiento | 4d | 2015-11-09 A | 2015-11-12 A | 42 | 100% |  |  |  | Hansel | 32h | 32h |
| 79 | 1.8.2 | Playback del Requerimiento | 1d | 2015-11-13 A | 2015-11-13 | 78 | 50% | 0.5d | 0.5d | 0d | Hansel | 8h | 4h |
| 80 | 1.8.3 | Confirmación Requerimiento | 1d | 2015-11-17 A | 2015-11-17 | 79 | 50% | 0.5d | 1.5d | 0d | Hansel | 8h | 4h |
| 81 | 1.8.4 | Diseño y Lógica de Sistema de Facturación | 3d | 2015-11-18 A | 2015-11-20 | 80 | 50% | 1.5d | 2.8d | 0d | Hansel | 24h | 12h |
| 82 | 1.8.5 | Reglas | 4d | 2015-11-23 A | 2015-11-26 | 81 | 70% | 1.2d | 2.5d | 0d | Hansel | 32h | 22.4h |
| 83 | 1.8.6 | Desarrollo | 10d | 2015-11-27 A | 2015-12-10 | 82 | 25% | 7.5d | 0.05d | 0d | Hansel | 80h | 20h |
| 84 | 1.8.7 | Pruebas Unitarias | 1d | 2015-12-11 A | 2015-12-11 | 83 | 5% | 0.95d | 0.03d | 0d | Hansel | 8h | 0.4h |
| 85 | 1.8.8 | Corrección de Defectos | 3d | 2015-12-14 A | 2015-12-16 | 84 | 1% | 2.97d | 1.5d | 0d | Hansel | 24h | 0.24h |
| 86 | 1.9 | **SeaChange** | 21d | 2015-12-17 A | 2016-01-25 |  | 14% | 18d | 5d |  |  | 168h | 24h |
| 87 | 1.9.1 | Análisis del Requerimiento | 3d | 2015-12-17 A | 2015-12-21 | 85 | 50% | 1.5d | 0.3d | 0d | Eduardo | 24h | 12h |
| 88 | 1.9.2 | Playback del Requerimiento | 1d | 2015-12-22 A | 2015-12-22 | 87 | 30% | 0.7d | 0.3d | 0d | Eduardo | 8h | 2.4h |
| 89 | 1.9.3 | Confirmación Requerimiento | 1d | 2015-12-23 A | 2015-12-23 | 88 | 30% | 0.7d | 0.9d | 0d | Eduardo | 8h | 2.4h |
| 90 | 1.9.4 | Diseño y Lógica de SeaChange | 3d | 2016-01-04 A | 2016-01-06 | 89 | 30% | 2.1d | 5d | 0d | Eduardo | 24h | 7.2h |
| 91 | 1.9.5 | Reglas | 2d | 2016-01-07 | 2016-01-08 | 90 |  |  | 5d | 0d | Eduardo | 16h |  |
| 92 | 1.9.6 | Desarrollo | 7d | 2016-01-11 | 2016-01-19 | 91 |  |  | 5d | 0d | Eduardo | 56h |  |
| 93 | 1.9.7 | Pruebas Unitarias | 1d | 2016-01-20 | 2016-01-20 | 92 |  |  | 5d | 0d | Eduardo | 8h |  |
| 94 | 1.9.8 | Corrección de Defectos | 3d | 2016-01-21 | 2016-01-25 | 93 |  |  | 5d |  | Eduardo | 24h |  |
| 95 | 1.10 | **Reportes** | 11d | 2015-12-17 A | 2016-01-11 |  | 13% | 9.59d | 15d |  |  | 88h | 11.28h |
| 96 | 1.10.1 | Desarrollo | 7d | 2015-12-17 A | 2016-01-05 | 68 | 20% | 5.6d | 0.01d | 0d | Hansel | 56h | 11.2h |
| 97 | 1.10.2 | Pruebas Unitarias | 1d | 2016-01-06 A | 2016-01-06 | 96 | 1% | 0.99d | 15d | 0d | Hansel | 8h | 0.08h |
| 98 | 1.10.3 | Corrección de Defectos | 3d | 2016-01-07 | 2016-01-11 | 97 |  |  | 15d |  | Hansel | 24h |  |
| 99 | 1.11 | **Ciclo 1 Pruebas Integrales** | 5d | 2016-02-03 | 2016-02-09 |  |  |  | 0d |  |  | 152h |  |
| 100 | 1.11.1 | Data Set Ciclo 1 Listo por Módulo | 1d | 2016-02-03 | 2016-02-03 | 76, 33, 85, 58, 67, 94, 98 |  |  | 0d |  | Megacable | 8h |  |
| 101 | 1.11.2 | Carga de datos por módulo | 1d | 2016-02-04 | 2016-02-04 | 100 |  |  | 0d |  | Hansel; Eduardo; Guillermo | 24h |  |
| 102 | 1.11.3 | Prueba Punta a Punta | 1d | 2016-02-05 | 2016-02-05 | 101 |  |  | 0d |  | Hansel; Eduardo; Guillermo | 24h |  |
| 103 | 1.11.4 | Gestión de Defectos en Datos y Módulos - 1 | 3d | 2016-02-05 | 2016-02-09 | 102SS |  |  | 0d |  | Hansel; Eduardo; Guillermo | 72h |  |
| 104 | 1.11.5 | Informe de Resultados | 1d | 2016-02-09 | 2016-02-09 | 103FF |  |  | 0d |  | Hansel; Eduardo; Guillermo | 24h |  |

| ID | WBS | Task | Duration | Start | Finish | Predecessors | Total slack | Resources | Work |
| --- | --- | --- | --- | --- | --- | --- | --- | --- | --- |
| 105 | 1.12 | **Ciclo 2 Pruebas Integrales** | 11d | 2016-02-10 | 2016-02-24 |  | 0d |  | 512h |
| 106 | 1.12.1 | Data Set Ciclo 1 Listo por Módulo | 1d | 2016-02-10 | 2016-02-10 | 104 | 0d | Hansel; Eduardo; Guillermo | 24h |
| 107 | 1.12.2 | Carga de datos por módulo | 1d | 2016-02-11 | 2016-02-11 | 106 | 0d | Hansel; Eduardo; Guillermo | 24h |
| 108 | 1.12.3 | Prueba Punta a Punta | 1d | 2016-02-12 | 2016-02-12 | 107 | 0d | Hansel; Eduardo; Guillermo | 24h |
| 109 | 1.12.4 | Gestión de Defectos en Datos y Módulos - 1 | 3d | 2016-02-12 | 2016-02-16 | 108SS | 0d | Hansel; Eduardo; Guillermo | 72h |
| 110 | 1.12.5 | Informe de Resultados | 1d | 2016-02-16 | 2016-02-16 | 109FF | 0d | Hansel; Eduardo; Guillermo | 24h |
| 111 | 1.12.6 | **Ciclo UAT** | 3d | 2016-02-17 | 2016-02-19 |  | 0d |  | 160h |
| 112 | 1.12.6.1 | Data Set Ciclo 1 Listo por Módulo | 1d | 2016-02-17 | 2016-02-17 | 110 | 0d | Hansel; Eduardo; Guillermo; Megacable | 32h |
| 113 | 1.12.6.2 | Carga de datos por módulo | 1d | 2016-02-18 | 2016-02-18 | 112 | 0d | Hansel; Eduardo; Guillermo; Megacable | 32h |
| 114 | 1.12.6.3 | Prueba Punta a Punta | 1d | 2016-02-19 | 2016-02-19 | 113 | 0d | Hansel; Eduardo; Guillermo; Megacable | 32h |
| 115 | 1.12.6.4 | Gestión de Defectos en Datos y Módulos - 1 | 1d | 2016-02-19 | 2016-02-19 | 114SS | 0d | Hansel; Eduardo; Guillermo; Megacable | 32h |
| 116 | 1.12.6.5 | Informe de Resultados | 1d | 2016-02-19 | 2016-02-19 | 115FF | 0d | Hansel; Eduardo; Guillermo; Megacable | 32h |
| 117 | 1.12.7 | Training | 5d | 2016-02-10 | 2016-02-16 | 106SS | 4d | Hansel; Eduardo; Guillermo | 120h |
| 118 | 1.12.8 | Cutover | 1d | 2016-02-22 | 2016-02-22 | 116 | 0d | Hansel; Eduardo; Guillermo | 24h |
| 119 | 1.12.9 | Go Live (1 Sistema) | 1d | 2016-02-23 | 2016-02-23 | 118, 117 | 0d | Hansel; Eduardo; Guillermo; Megacable | 32h |
| 120 | 1.12.10 | Handover Protocol | 1d | 2016-02-24 | 2016-02-24 | 119 | 0d | Connie | 8h |
