# MantenimientoTaller_REAL

Schedule from MS Project, 2012-11-10 to 2015-06-26, A marks actual dates.

## Calendars

- Estándar: Mon-Fri 09:00-13:00, 15:00-19:00; Sat-Sun off.

## Resources

| Resource |
| --- |
| Jesús Alberto Durán Cobián |
| Salvador Almaraz Ayala |
| Víctor Manuel Gómez Zamoras |
| César Germán Rodríguez Robles |
| Eduardo Rodríguez Velasco |
| Guillermo Daniel García Martínez |
| Hansel Abraham Mendoza García |
| Luis Ramón Escamilla Ingriago |
| Samuel Ivan Seda Legaría |
| José Ramón Escobar Martínez |
| Yessica Alejandra Vacio Andalón |
| María José Jara y Prosperi |
| Connie Larios Barragán |

## Schedule

| ID | WBS | Task | Type | Duration | Start | Finish | Complete | Remaining | Actual start | Baseline 1 start | Baseline 1 finish | Resources | Work | Actual work |
| --- | --- | --- | --- | --- | --- | --- | --- | --- | --- | --- | --- | --- | --- | --- |
| 1 | 1 | **MegacablePublicidad** |  | 1d? | 2012-11-10 A | 2012-11-10 | 2% | 0.98d? |  |  |  |  | 3052.55h | 46h |
| 2 | 1.1 | Dirección: | manual | 1d | 2012-11-10 | 2012-11-10 |  |  |  |  |  | Jesús Alberto Durán Cobián | 8h |  |
| 3 | 1.2 | Líder de proyecto: | manual | 1d | 2012-11-10 | 2012-11-10 |  |  |  |  |  | Yessica Alejandra Vacio Andalón | 8h |  |
| 4 | 1.3 | Analista: | manual | 1d | 2012-11-10 | 2012-11-10 |  |  |  |  |  | Eduardo Rodríguez Velasco; Hansel Abraham Mendoza García | 16h |  |
| 5 | 1.4 | Diseñador: | manual | 1d | 2012-11-10 | 2012-11-10 |  |  |  |  |  | Víctor Manuel Gómez Zamoras | 8h |  |
| 6 | 1.5 | Desarrollador: | manual | 1d | 2012-11-10 | 2012-11-10 |  |  |  |  |  | Eduardo Rodríguez Velasco; Hansel Abraham Mendoza García | 16h |  |
| 7 | 1.6 | Evaluador: | manual | 1d | 2012-11-10 | 2012-11-10 |  |  |  |  |  | César Germán Rodríguez Robles | 8h |  |
| 8 | 1.7 | Administrador Configuración: | manual | 1d | 2012-11-10 | 2012-11-10 |  |  |  |  |  | Salvador Almaraz Ayala | 8h |  |
| 9 | 1.8 | QA: | manual | 1d | 2012-11-10 | 2012-11-10 |  |  |  |  |  | Yessica Alejandra Vacio Andalón | 8h |  |
| 10 | 1.9 | **Prospección** |  | 5d? | 2014-03-19 A | 2014-03-25 A | 100% |  |  |  |  |  | 39h | 39h |
| 11 | 1.9.1 | Realizar llenado de cuestionario de necesidades del cliente | manual | 1d | 2014-03-19 | 2014-03-19 A | 100% |  |  | 2014-03-19 | 2014-03-19 | Connie Larios Barragán | 8h | 8h |
| 12 | 1.9.2 | Realizar listado de requerimientos | manual | 1d | 2014-03-20 | 2014-03-20 A | 100% |  |  | 2014-03-20 | 2014-03-20 | Connie Larios Barragán | 8h | 8h |
| 13 | 1.9.3 | Identificar riesgos | manual | 1d | 2014-03-21 | 2014-03-21 A | 100% |  |  | 2014-03-21 | 2014-03-21 | Connie Larios Barragán | 8h | 8h |
| 14 | 1.9.4 | Realizar estimación y propuesta | manual | 1d | 2014-03-24 | 2014-03-24 A | 100% |  |  | 2014-03-24 | 2014-03-24 | Connie Larios Barragán | 8h | 8h |
| 15 | 1.9.5 | Realizar cotización | manual | 1d | 2014-03-25 | 2014-03-25 A | 100% |  |  | 2014-03-25 | 2014-03-25 | Jesús Alberto Durán Cobián | 3h | 3h |
| 16 | 1.9.6 | Generar Contrato | manual | 1d | 2014-03-25 | 2014-03-25 A | 100% |  |  | 2014-03-25 | 2014-03-25 | Jesús Alberto Durán Cobián | 3h | 3h |
| 17 | 1.9.7 | Generar minuta de reunión | manual | 1d | 2014-03-25 | 2014-03-25 A | 100% |  |  | 2014-03-25 | 2014-03-25 | Jesús Alberto Durán Cobián | 1h | 1h |
| 18 | 1.10 | Generar línea base Prospección | manual | 1d? | 2012-11-10 | 2012-11-10 |  |  |  |  |  |  |  |  |
| 19 | 1.11 | **Planeación** |  | 1d? | 2012-11-10 | 2012-11-10 | 49% | 0.51d? | 2014-06-25 |  |  |  | 14h | 7h |
| 20 | 1.11.1 | Reunión para ver la carga de trabajo del equipo | milestone, manual | 0d | 2014-06-25 A | 2014-06-25 A | 100% |  |  | 2014-06-25 | 2014-06-25 | Connie Larios Barragán |  |  |
| 21 | 1.11.2 | Petición al Administrador Configuración de creación de Carpeta de proyecto | milestone, manual | 0d | 2014-06-25 A | 2014-06-25 A | 100% |  |  | 2014-06-25 | 2014-06-25 | Connie Larios Barragán |  |  |
| 22 | 1.11.3 | Cronograma del proyecto | manual | 1d | 2014-06-25 | 2014-06-25 A | 100% |  |  | 2014-06-25 | 2014-06-25 | Connie Larios Barragán | 3h | 3h |
| 23 | 1.11.4 | Plan de Proyecto | manual | 1d | 2014-06-25 | 2014-06-25 A | 100% |  |  | 2014-06-25 | 2014-06-25 | Connie Larios Barragán | 3h | 3h |
| 24 | 1.11.5 | Elaborar presentación de Kick Off-Interno | manual | 1d | 2014-06-25 | 2014-06-25 A | 100% |  |  | 2014-06-25 | 2014-06-25 | Connie Larios Barragán | 1h | 1h |
| 25 | 1.11.6 | Elaborar presentación de Kick Off-Externo | milestone, manual | 0d | 2014-06-25 | 2014-06-25 |  |  |  | 2014-06-25 | 2014-06-25 | Connie Larios Barragán |  |  |
| 26 | 1.11.7 | Realizar Presentación de Kick Off-Interno | manual | 1.12d | 2014-06-26 | 2014-06-27 |  |  |  |  |  | Connie Larios Barragán | 3h |  |
| 27 | 1.11.8 | Realizar Presentación de Kick Off-Externo | manual | 1d | 2014-06-26 | 2014-06-26 |  |  |  |  |  | Connie Larios Barragán | 2h |  |
| 28 | 1.11.9 | Generar minuta de reunión | manual | 1d | 2014-06-26 | 2014-06-26 |  |  |  |  |  | Connie Larios Barragán | 2h |  |
| 29 | 1.12 | Generar línea base Planeación | manual | 1d? | 2012-11-10 | 2012-11-10 |  |  |  |  |  |  |  |  |

| ID | WBS | Task | Type | Duration | Start | Finish | Resources | Work |
| --- | --- | --- | --- | --- | --- | --- | --- | --- |
| 30 | 1.13 | **Ingeniería** |  | 1d? | 2012-11-10 | 2012-11-10 |  | 2827h |
| 31 | 1.13.1 | **Análisis** |  | 1d? | 2012-11-10 | 2012-11-10 |  | 89h |
| 32 | 1.13.1.1 | Generar Mockups | manual | 6d | 2014-06-27 | 2014-07-04 | Eduardo Rodríguez Velasco; Hansel Abraham Mendoza García; Salvador Almaraz Ayala | 40h |
| 33 | 1.13.1.2 | Generar Flujo de pantallas | manual | 5d | 2014-07-07 | 2014-07-11 | Eduardo Rodríguez Velasco; Hansel Abraham Mendoza García; Salvador Almaraz Ayala | 20h |
| 34 | 1.13.1.3 | Generar documento funcional | manual | 1d | 2014-07-11 | 2014-07-11 | Eduardo Rodríguez Velasco; Hansel Abraham Mendoza García; Salvador Almaraz Ayala | 20h |
| 35 | 1.13.1.4 | Validar Mockups, flujo de pantallas y documento funcional con el equipo | manual | 1d | 2014-07-14 | 2014-07-14 | Eduardo Rodríguez Velasco; Hansel Abraham Mendoza García; Salvador Almaraz Ayala | 8h |
| 36 | 1.13.1.5 | Generar Matriz de Rastreabilidad | manual | 1d | 2014-07-14 | 2014-07-14 | Eduardo Rodríguez Velasco; Hansel Abraham Mendoza García; Salvador Almaraz Ayala | 1h |
| 37 | 1.13.1.6 | Aceptar los compromisos con los requerimientos | milestone, manual | 0d | 2014-07-14 | 2014-07-14 | Eduardo Rodríguez Velasco; Hansel Abraham Mendoza García; Salvador Almaraz Ayala |  |
| 38 | 1.13.2 | **Diseño** |  | 1d? | 2012-11-10 | 2012-11-10 |  | 200h |
| 39 | 1.13.2.1 | **Todas las interfaces** |  | 1d? | 2012-11-10 | 2012-11-10 |  | 200h |
| 40 | 1.13.2.1.1 | Generar propuestas | manual | 25d | 2014-07-14 | 2014-08-15 | Víctor Manuel Gómez Zamoras | 160h |
| 41 | 1.13.2.1.2 | Validar propuestas | manual | 25d | 2014-07-14 | 2014-08-15 | Víctor Manuel Gómez Zamoras | 30h |
| 42 | 1.13.2.1.3 | Actualizar Matriz de Rastreabilidad | manual | 25d | 2014-07-14 | 2014-08-15 | Víctor Manuel Gómez Zamoras | 5h |
| 43 | 1.13.2.1.4 | Generar entregable de propuesta | manual | 25d | 2014-07-14 | 2014-08-15 | Víctor Manuel Gómez Zamoras | 5h |
| 44 | 1.13.3 | **Programación (Desarrollo)** |  | 1d? | 2012-11-10 | 2012-11-10 |  | 1577h |
| 45 | 1.13.3.1 | **WebService Eslabón** |  | 1d? | 2012-11-10 | 2012-11-10 |  | 80h |
| 46 | 1.13.3.1.1 | WebService Slabon | manual | 10d | 2014-07-14 | 2014-07-25 | Eduardo Rodríguez Velasco; Hansel Abraham Mendoza García | 80h |
| 47 | 1.13.3.1.2 | Generar entregable con el cliente | milestone, manual | 0d | 2014-07-28 | 2014-07-28 | Eduardo Rodríguez Velasco; Hansel Abraham Mendoza García |  |
| 48 | 1.13.3.2 | Actualizar Matriz de Rastreabilidad | milestone, manual | 0d | 2014-07-28 | 2014-07-28 | Eduardo Rodríguez Velasco; Hansel Abraham Mendoza García |  |
| 49 | 1.13.3.3 | Realizar encuesta de satisfacción al cliente | manual | 1d | 2014-07-28 | 2014-07-28 | Yessica Alejandra Vacio Andalón | 1h |
| 50 | 1.13.3.4 | **WebService Dynamics** |  | 1d? | 2012-11-10 | 2012-11-10 |  | 120h |
| 51 | 1.13.3.4.1 | WebService Dynamics | manual | 15d | 2014-07-28 | 2014-08-15 | Eduardo Rodríguez Velasco; Hansel Abraham Mendoza García | 120h |
| 52 | 1.13.3.4.2 | Generar entregable con el cliente | milestone, manual | 0d | 2014-08-18 | 2014-08-18 | Eduardo Rodríguez Velasco; Hansel Abraham Mendoza García |  |
| 53 | 1.13.3.5 | Actualizar Matriz de Rastreabilidad | milestone, manual | 0d | 2014-08-18 | 2014-08-18 | Eduardo Rodríguez Velasco; Hansel Abraham Mendoza García |  |
| 54 | 1.13.3.6 | Realizar encuesta de satisfacción al cliente | manual | 1d | 2014-08-18 | 2014-08-18 | Yessica Alejandra Vacio Andalón | 1h |

| ID | WBS | Task | Type | Duration | Start | Finish | Resources | Work |
| --- | --- | --- | --- | --- | --- | --- | --- | --- |
| 55 | 1.13.3.7 | **Conexiones WebService sistema de programación** |  | 1d? | 2012-11-10 | 2012-11-10 |  | 120h |
| 56 | 1.13.3.7.1 | Conexiones WebService Sistema de programación | manual | 15d | 2014-08-18 | 2014-09-05 | Eduardo Rodríguez Velasco; Hansel Abraham Mendoza García | 120h |
| 57 | 1.13.3.7.2 | Generar entregable final con el cliente | milestone, manual | 0d | 2014-09-08 | 2014-09-08 | Eduardo Rodríguez Velasco; Hansel Abraham Mendoza García |  |
| 58 | 1.13.3.8 | Actualizar Matriz de Rastreabilidad | milestone, manual | 0d | 2014-09-08 | 2014-09-08 | Eduardo Rodríguez Velasco; Hansel Abraham Mendoza García |  |
| 59 | 1.13.3.9 | Realizar encuesta de satisfacción al cliente | manual | 1d | 2014-09-08 | 2014-09-08 | Yessica Alejandra Vacio Andalón | 1h |
| 60 | 1.13.3.10 | **Registro de usuarios** |  | 1d? | 2012-11-10 | 2012-11-10 |  | 80h |
| 61 | 1.13.3.10.1 | Registro de las cuentas de usuario | manual | 5d | 2014-09-08 | 2014-09-12 | Eduardo Rodríguez Velasco; Hansel Abraham Mendoza García | 40h |
| 62 | 1.13.3.10.2 | Inicio de sesión de los usuarios | manual | 5d | 2014-09-15 | 2014-09-19 | Eduardo Rodríguez Velasco; Hansel Abraham Mendoza García | 40h |
| 63 | 1.13.3.10.3 | Generar entregable con el cliente | milestone, manual | 0d | 2014-09-22 | 2014-09-22 | Eduardo Rodríguez Velasco; Hansel Abraham Mendoza García |  |
| 64 | 1.13.3.11 | Actualizar Matriz de Rastreabilidad | milestone, manual | 0d | 2014-09-22 | 2014-09-22 | Eduardo Rodríguez Velasco; Hansel Abraham Mendoza García |  |
| 65 | 1.13.3.12 | Realizar encuesta de satisfacción al cliente | manual | 1d | 2014-09-22 | 2014-09-22 | Yessica Alejandra Vacio Andalón | 1h |
| 66 | 1.13.3.13 | **Dashboard de opciones** |  | 1d? | 2012-11-10 | 2012-11-10 |  | 80h |
| 67 | 1.13.3.13.1 | Dashboard de opciones | manual | 5d | 2014-09-22 | 2014-09-26 | Eduardo Rodríguez Velasco; Hansel Abraham Mendoza García | 40h |
| 68 | 1.13.3.13.2 | Registro de clientes | manual | 5d | 2014-09-29 | 2014-10-03 | Eduardo Rodríguez Velasco; Hansel Abraham Mendoza García | 40h |
| 69 | 1.13.3.13.3 | Generar entregable con el cliente | milestone, manual | 0d | 2014-10-06 | 2014-10-06 | Eduardo Rodríguez Velasco; Hansel Abraham Mendoza García |  |
| 70 | 1.13.3.14 | Actualizar Matriz de Rastreabilidad | milestone, manual | 0d | 2014-10-06 | 2014-10-06 | Eduardo Rodríguez Velasco; Hansel Abraham Mendoza García |  |
| 71 | 1.13.3.15 | Realizar encuesta de satisfacción al cliente | manual | 1d | 2014-10-06 | 2014-10-06 | Yessica Alejandra Vacio Andalón | 1h |
| 72 | 1.13.3.16 | **Ordenes de Transmisión** |  | 1d? | 2012-11-10 | 2012-11-10 |  | 80h |
| 73 | 1.13.3.16.1 | Generar Orden de transmisión | manual | 5d | 2014-10-06 | 2014-10-10 | Eduardo Rodríguez Velasco; Hansel Abraham Mendoza García | 40h |
| 74 | 1.13.3.16.2 | Registro de clientes | manual | 5d | 2014-10-13 | 2014-10-17 | Eduardo Rodríguez Velasco; Hansel Abraham Mendoza García | 40h |
| 75 | 1.13.3.16.3 | Generar entregable final con el cliente | milestone, manual | 0d | 2014-10-20 | 2014-10-20 | Eduardo Rodríguez Velasco; Hansel Abraham Mendoza García |  |
| 76 | 1.13.3.17 | Actualizar Matriz de Rastreabilidad | milestone, manual | 0d | 2014-10-20 | 2014-10-20 | Eduardo Rodríguez Velasco; Hansel Abraham Mendoza García |  |
| 77 | 1.13.3.18 | Realizar encuesta de satisfacción al cliente | manual | 1d | 2014-10-20 | 2014-10-20 | Yessica Alejandra Vacio Andalón | 1h |
| 78 | 1.13.3.19 | **Solicitar descuento** |  | 1d? | 2012-11-10 | 2012-11-10 |  | 80h |
| 79 | 1.13.3.19.1 | Solicitar descuento | manual | 10d | 2014-10-20 | 2014-10-31 | Eduardo Rodríguez Velasco; Hansel Abraham Mendoza García | 80h |
| 80 | 1.13.3.19.2 | Generar entregable con el cliente | milestone, manual | 0d | 2014-11-03 | 2014-11-03 | Eduardo Rodríguez Velasco; Hansel Abraham Mendoza García |  |
| 81 | 1.13.3.20 | Actualizar Matriz de Rastreabilidad | milestone, manual | 0d | 2014-11-03 | 2014-11-03 | Eduardo Rodríguez Velasco; Hansel Abraham Mendoza García |  |
| 82 | 1.13.3.21 | Realizar encuesta de satisfacción al cliente | manual | 1d | 2014-11-03 | 2014-11-03 | Yessica Alejandra Vacio Andalón | 1h |

| ID | WBS | Task | Type | Duration | Start | Finish | Resources | Work |
| --- | --- | --- | --- | --- | --- | --- | --- | --- |
| 83 | 1.13.3.22 | **Detalle de orden de transmisión** |  | 1d? | 2012-11-10 | 2012-11-10 |  | 80h |
| 84 | 1.13.3.22.1 | Reporte de orden de transmisión | manual | 5d | 2014-11-03 | 2014-11-07 | Eduardo Rodríguez Velasco; Hansel Abraham Mendoza García | 40h |
| 85 | 1.13.3.22.2 | Listado de ordenes de transmisión | manual | 2d | 2014-11-10 | 2014-11-11 | Eduardo Rodríguez Velasco; Hansel Abraham Mendoza García | 16h |
| 86 | 1.13.3.22.3 | Detalle listado de ordenes de transmisión | manual | 3d | 2014-11-12 | 2014-11-14 | Eduardo Rodríguez Velasco; Hansel Abraham Mendoza García | 24h |
| 87 | 1.13.3.22.4 | Generar entregable con el cliente | milestone, manual | 0d | 2014-11-17 | 2014-11-17 | Eduardo Rodríguez Velasco; Hansel Abraham Mendoza García |  |
| 88 | 1.13.3.23 | Actualizar Matriz de Rastreabilidad | milestone, manual | 0d | 2014-11-17 | 2014-11-17 | Eduardo Rodríguez Velasco; Hansel Abraham Mendoza García |  |
| 89 | 1.13.3.24 | Realizar encuesta de satisfacción al cliente | manual | 1d | 2014-11-17 | 2014-11-17 | Yessica Alejandra Vacio Andalón | 1h |
| 90 | 1.13.3.25 | **Generar y editar comisiones** |  | 1d? | 2012-11-10 | 2012-11-10 |  | 80h |
| 91 | 1.13.3.25.1 | Ligar elemento detalle a pago | manual | 5d | 2014-11-17 | 2014-11-21 | Eduardo Rodríguez Velasco; Hansel Abraham Mendoza García | 40h |
| 92 | 1.13.3.25.2 | Generar y Editar comisiones | manual | 5d | 2014-11-24 | 2014-11-28 | Eduardo Rodríguez Velasco; Hansel Abraham Mendoza García | 40h |
| 93 | 1.13.3.25.3 | Generar entregable final con el cliente | milestone, manual | 0d | 2014-12-01 | 2014-12-01 | Eduardo Rodríguez Velasco; Hansel Abraham Mendoza García |  |
| 94 | 1.13.3.26 | Actualizar Matriz de Rastreabilidad | milestone, manual | 0d | 2014-12-01 | 2014-12-01 | Eduardo Rodríguez Velasco; Hansel Abraham Mendoza García |  |
| 95 | 1.13.3.27 | Realizar encuesta de satisfacción al cliente | manual | 1d | 2014-12-01 | 2014-12-01 | Yessica Alejandra Vacio Andalón | 1h |
| 96 | 1.13.3.28 | **Módulo de prioridades** |  | 1d? | 2012-11-10 | 2012-11-10 |  | 80h |
| 97 | 1.13.3.28.1 | Ver mis comisiones | manual | 5d | 2014-11-10 | 2014-11-14 | Eduardo Rodríguez Velasco; Hansel Abraham Mendoza García | 40h |
| 98 | 1.13.3.28.2 | Módulo de prioridades | manual | 5d | 2014-11-17 | 2014-11-21 | Eduardo Rodríguez Velasco; Hansel Abraham Mendoza García | 40h |
| 99 | 1.13.3.28.3 | Generar entregable con el cliente | milestone, manual | 0d | 2014-11-24 | 2014-11-24 | Eduardo Rodríguez Velasco; Hansel Abraham Mendoza García |  |
| 100 | 1.13.3.29 | Actualizar Matriz de Rastreabilidad | milestone, manual | 0d | 2014-11-24 | 2014-11-24 | Eduardo Rodríguez Velasco; Hansel Abraham Mendoza García |  |
| 101 | 1.13.3.30 | Realizar encuesta de satisfacción al cliente | manual | 1d | 2014-11-24 | 2014-11-24 | Yessica Alejandra Vacio Andalón | 1h |
| 102 | 1.13.3.31 | **Sistema de descuentos** |  | 1d? | 2012-11-10 | 2012-11-10 |  | 80h |
| 103 | 1.13.3.31.1 | Editar sistema de descuentos | manual | 10d | 2014-11-24 | 2014-12-05 | Eduardo Rodríguez Velasco; Hansel Abraham Mendoza García | 80h |
| 104 | 1.13.3.31.2 | Generar entregable con el cliente | milestone, manual | 0d | 2014-12-08 | 2014-12-08 | Eduardo Rodríguez Velasco; Hansel Abraham Mendoza García |  |
| 105 | 1.13.3.32 | Actualizar Matriz de Rastreabilidad | milestone, manual | 0d | 2014-12-08 | 2014-12-08 | Eduardo Rodríguez Velasco; Hansel Abraham Mendoza García |  |
| 106 | 1.13.3.33 | Realizar encuesta de satisfacción al cliente | manual | 1d | 2014-12-08 | 2014-12-08 | Yessica Alejandra Vacio Andalón | 1h |

| ID | WBS | Task | Type | Duration | Start | Finish | Resources | Work |
| --- | --- | --- | --- | --- | --- | --- | --- | --- |
| 107 | 1.13.3.34 | **Despliegue de evaluación de productos** |  | 1d? | 2012-11-10 | 2012-11-10 |  | 80h |
| 108 | 1.13.3.34.1 | Despliegue de evaluación de productos | manual | 10d | 2014-12-08 | 2014-12-19 | Eduardo Rodríguez Velasco; Hansel Abraham Mendoza García | 80h |
| 109 | 1.13.3.34.2 | Generar entregable final con el cliente | milestone, manual | 0d | 2014-12-22 | 2014-12-22 | Eduardo Rodríguez Velasco; Hansel Abraham Mendoza García |  |
| 110 | 1.13.3.35 | Actualizar Matriz de Rastreabilidad | milestone, manual | 0d | 2014-12-22 | 2014-12-22 | Eduardo Rodríguez Velasco; Hansel Abraham Mendoza García |  |
| 111 | 1.13.3.36 | Realizar encuesta de satisfacción al cliente | manual | 1d | 2014-12-22 | 2014-12-22 | Yessica Alejandra Vacio Andalón | 1h |
| 112 | 1.13.3.37 | **Evaluación del producto** |  | 1d? | 2012-11-10 | 2012-11-10 |  | 120h |
| 113 | 1.13.3.37.1 | Evaluación del producto | manual | 5d | 2014-12-15 | 2014-12-19 | Eduardo Rodríguez Velasco; Hansel Abraham Mendoza García | 40h |
| 114 | 1.13.3.37.2 | Historial del evaluador | manual | 12d | 2014-12-22 | 2015-01-06 | Eduardo Rodríguez Velasco; Hansel Abraham Mendoza García | 80h |
| 115 | 1.13.3.37.3 | Generar entregable final con el cliente | milestone, manual | 0d | 2015-01-07 | 2015-01-07 | Eduardo Rodríguez Velasco; Hansel Abraham Mendoza García |  |
| 116 | 1.13.3.38 | Actualizar Matriz de Rastreabilidad | milestone, manual | 0d | 2015-01-07 | 2015-01-07 | Eduardo Rodríguez Velasco; Hansel Abraham Mendoza García |  |
| 117 | 1.13.3.39 | Realizar encuesta de satisfacción al cliente | manual | 1d | 2015-01-07 | 2015-01-07 | Yessica Alejandra Vacio Andalón | 1h |
| 118 | 1.13.3.40 | **Módulo de estadísticas** |  | 1d? | 2012-11-10 | 2012-11-10 |  | 80h |
| 119 | 1.13.3.40.1 | Módulo de estadísticas | manual | 10d | 2015-01-07 | 2015-01-20 | Eduardo Rodríguez Velasco; Hansel Abraham Mendoza García | 80h |
| 120 | 1.13.3.40.2 | Generar entregable final con el cliente | milestone, manual | 0d | 2015-01-21 | 2015-01-21 | Eduardo Rodríguez Velasco; Hansel Abraham Mendoza García |  |
| 121 | 1.13.3.41 | Actualizar Matriz de Rastreabilidad | milestone, manual | 0d | 2015-01-21 | 2015-01-21 | Eduardo Rodríguez Velasco; Hansel Abraham Mendoza García |  |
| 122 | 1.13.3.42 | Realizar encuesta de satisfacción al cliente | manual | 0.12d | 2015-01-21 | 2015-01-21 | Yessica Alejandra Vacio Andalón | 1h |
| 123 | 1.13.3.43 | **Clientes sin actividad** |  | 1d? | 2012-11-10 | 2012-11-10 |  | 120h |
| 124 | 1.13.3.43.1 | Calculo de clientes sin actividad | manual | 5d | 2015-01-21 | 2015-01-27 | Eduardo Rodríguez Velasco; Hansel Abraham Mendoza García | 40h |
| 125 | 1.13.3.43.2 | Historial de pagos | manual | 12d | 2015-01-28 | 2015-02-12 | Eduardo Rodríguez Velasco; Hansel Abraham Mendoza García | 80h |
| 126 | 1.13.3.43.3 | Generar entregable final con el cliente | milestone, manual | 0d | 2015-02-16 | 2015-02-16 | Eduardo Rodríguez Velasco; Hansel Abraham Mendoza García |  |
| 127 | 1.13.3.44 | Actualizar Matriz de Rastreabilidad | milestone, manual | 0d | 2015-02-16 | 2015-02-16 | Eduardo Rodríguez Velasco; Hansel Abraham Mendoza García |  |
| 128 | 1.13.3.45 | Realizar encuesta de satisfacción al cliente | manual | 1d | 2015-02-16 | 2015-02-16 | Yessica Alejandra Vacio Andalón | 1h |
| 129 | 1.13.3.46 | **Reportes del sistema de programación** |  | 1d? | 2012-11-10 | 2012-11-10 |  | 120h |
| 130 | 1.13.3.46.1 | Autorizar transmición | manual | 3d | 2015-02-13 | 2015-02-17 | Eduardo Rodríguez Velasco; Hansel Abraham Mendoza García | 24h |
| 131 | 1.13.3.46.2 | Despliegue de horarios programados | manual | 2d | 2015-02-18 | 2015-02-19 | Eduardo Rodríguez Velasco; Hansel Abraham Mendoza García | 16h |
| 132 | 1.13.3.46.3 | Horarios transmitidos | manual | 2d | 2015-02-20 | 2015-02-23 | Eduardo Rodríguez Velasco; Hansel Abraham Mendoza García | 16h |
| 133 | 1.13.3.46.4 | Cancelación de servicio | manual | 5d | 2015-02-24 | 2015-03-02 | Eduardo Rodríguez Velasco; Hansel Abraham Mendoza García | 40h |
| 134 | 1.13.3.46.5 | Aceptar cancelación por parte del contador | manual | 3d | 2015-03-03 | 2015-03-05 | Eduardo Rodríguez Velasco; Hansel Abraham Mendoza García | 24h |
| 135 | 1.13.3.46.6 | Generar entregable final con el cliente | milestone, manual | 0d | 2015-03-09 | 2015-03-09 | Eduardo Rodríguez Velasco; Hansel Abraham Mendoza García |  |
| 136 | 1.13.3.47 | Actualizar Matriz de Rastreabilidad | milestone, manual | 0d | 2015-03-09 | 2015-03-09 | Eduardo Rodríguez Velasco; Hansel Abraham Mendoza García |  |
| 137 | 1.13.3.48 | Realizar encuesta de satisfacción al cliente | manual | 1d | 2015-03-09 | 2015-03-09 | Yessica Alejandra Vacio Andalón | 1h |

| ID | WBS | Task | Type | Duration | Start | Finish | Resources | Work |
| --- | --- | --- | --- | --- | --- | --- | --- | --- |
| 138 | 1.13.3.49 | **Bloqueo Interno** |  | 1d? | 2012-11-10 | 2012-11-10 |  | 80h |
| 139 | 1.13.3.49.1 | Sistema completo de notificaciones | manual | 5d | 2015-03-06 | 2015-03-12 | Eduardo Rodríguez Velasco; Hansel Abraham Mendoza García | 40h |
| 140 | 1.13.3.49.2 | Bloqueo interno | manual | 6d | 2015-03-13 | 2015-03-20 | Eduardo Rodríguez Velasco; Hansel Abraham Mendoza García | 40h |
| 141 | 1.13.3.49.3 | Generar entregable final con el cliente | milestone, manual | 0d | 2015-03-23 | 2015-03-23 | Eduardo Rodríguez Velasco; Hansel Abraham Mendoza García |  |
| 142 | 1.13.3.50 | Actualizar Matriz de Rastreabilidad | milestone, manual | 0d | 2015-03-23 | 2015-03-23 | Eduardo Rodríguez Velasco; Hansel Abraham Mendoza García |  |
| 143 | 1.13.3.51 | Realizar encuesta de satisfacción al cliente | manual | 1d | 2015-03-23 | 2015-03-23 | Yessica Alejandra Vacio Andalón | 1h |
| 144 | 1.13.4 | **Pruebas** |  | 1d? | 2012-11-10 | 2012-11-10 |  | 961h |
| 145 | 1.13.4.1 | Generar un plan de pruebas | manual | 10d | 2014-06-30 | 2014-07-11 | César Germán Rodríguez Robles | 80h |
| 146 | 1.13.4.2 | Actualizar Matriz de Rastreabilidad | manual | 1d | 2014-07-14 | 2014-07-14 | César Germán Rodríguez Robles | 1h |
| 147 | 1.13.4.3 | **WebService Eslabon** |  | 1d | 2012-11-10 | 2012-11-10 |  | 40h |
| 148 | 1.13.4.3.1 | Ejecutar plan de pruebas | manual | 5d | 2014-07-21 | 2014-07-25 | César Germán Rodríguez Robles | 40h |
| 149 | 1.13.4.3.2 | Rgistro de bugs | milestone, manual | 0d | 2014-07-25 | 2014-07-25 | César Germán Rodríguez Robles |  |
| 150 | 1.13.4.3.3 | Actualización de plan de pruebas | milestone, manual | 0d | 2014-07-25 | 2014-07-25 | César Germán Rodríguez Robles |  |
| 151 | 1.13.4.4 | **Conexiones WebService Dynamics** |  | 1d | 2012-11-10 | 2012-11-10 |  | 64h |
| 152 | 1.13.4.4.1 | Ejecutar plan de pruebas | manual | 8d | 2014-08-06 | 2014-08-15 | César Germán Rodríguez Robles | 64h |
| 153 | 1.13.4.4.2 | Rgistro de bugs | milestone, manual | 0d | 2014-08-15 | 2014-08-15 | César Germán Rodríguez Robles |  |
| 154 | 1.13.4.4.3 | Actualización de plan de pruebas | milestone, manual | 0d | 2014-08-15 | 2014-08-15 | César Germán Rodríguez Robles |  |
| 155 | 1.13.4.5 | **Conexiones WebService Sistema de programación** |  | 1d | 2012-11-10 | 2012-11-10 |  | 64h |
| 156 | 1.13.4.5.1 | Ejecutar plan de pruebas | manual | 8d | 2014-08-27 | 2014-09-05 | César Germán Rodríguez Robles | 64h |
| 157 | 1.13.4.5.2 | Rgistro de bugs | milestone, manual | 0d | 2014-09-05 | 2014-09-05 | César Germán Rodríguez Robles |  |
| 158 | 1.13.4.5.3 | Actualización de plan de pruebas | milestone, manual | 0d | 2014-09-05 | 2014-09-05 | César Germán Rodríguez Robles |  |
| 159 | 1.13.4.6 | **Registro de usuarios** |  | 1d | 2012-11-10 | 2012-11-10 |  | 40h |
| 160 | 1.13.4.6.1 | Ejecutar plan de pruebas | manual | 5d | 2014-09-15 | 2014-09-19 | César Germán Rodríguez Robles | 40h |
| 161 | 1.13.4.6.2 | Rgistro de bugs | milestone, manual | 0d | 2014-09-19 | 2014-09-19 | César Germán Rodríguez Robles |  |
| 162 | 1.13.4.6.3 | Actualización de plan de pruebas | milestone, manual | 0d | 2014-09-19 | 2014-09-19 | César Germán Rodríguez Robles |  |

| ID | WBS | Task | Type | Duration | Start | Finish | Resources | Work |
| --- | --- | --- | --- | --- | --- | --- | --- | --- |
| 163 | 1.13.4.7 | **Dashboard de opciones** |  | 1d | 2012-11-10 | 2012-11-10 |  | 40h |
| 164 | 1.13.4.7.1 | Ejecutar plan de pruebas | manual | 5d | 2014-09-29 | 2014-10-03 | César Germán Rodríguez Robles | 40h |
| 165 | 1.13.4.7.2 | Rgistro de bugs | milestone, manual | 0d | 2014-10-03 | 2014-10-03 | César Germán Rodríguez Robles |  |
| 166 | 1.13.4.7.3 | Actualización de plan de pruebas | milestone, manual | 0d | 2014-10-03 | 2014-10-03 | César Germán Rodríguez Robles |  |
| 167 | 1.13.4.8 | **Orden de transmisión** |  | 1d | 2012-11-10 | 2012-11-10 |  | 40h |
| 168 | 1.13.4.8.1 | Ejecutar plan de pruebas | manual | 5d | 2014-10-13 | 2014-10-17 | César Germán Rodríguez Robles | 40h |
| 169 | 1.13.4.8.2 | Rgistro de bugs | milestone, manual | 0d | 2014-10-17 | 2014-10-17 | César Germán Rodríguez Robles |  |
| 170 | 1.13.4.8.3 | Actualización de plan de pruebas | milestone, manual | 0d | 2014-10-17 | 2014-10-17 | César Germán Rodríguez Robles |  |
| 171 | 1.13.4.9 | **Solicitar descuento** |  | 1d | 2012-11-10 | 2012-11-10 |  | 40h |
| 172 | 1.13.4.9.1 | Ejecutar plan de pruebas | manual | 5d | 2014-10-27 | 2014-10-31 | César Germán Rodríguez Robles | 40h |
| 173 | 1.13.4.9.2 | Rgistro de bugs | milestone, manual | 0d | 2014-10-31 | 2014-10-31 | César Germán Rodríguez Robles |  |
| 174 | 1.13.4.9.3 | Actualización de plan de pruebas | milestone, manual | 0d | 2014-10-31 | 2014-10-31 | César Germán Rodríguez Robles |  |
| 175 | 1.13.4.10 | **Detalle de la orden de transmisión** |  | 1d | 2012-11-10 | 2012-11-10 |  | 40h |
| 176 | 1.13.4.10.1 | Ejecutar plan de pruebas | manual | 5d | 2014-11-10 | 2014-11-14 | César Germán Rodríguez Robles | 40h |
| 177 | 1.13.4.10.2 | Rgistro de bugs | milestone, manual | 0d | 2014-11-14 | 2014-11-14 | César Germán Rodríguez Robles |  |
| 178 | 1.13.4.10.3 | Actualización de plan de pruebas | milestone, manual | 0d | 2014-11-14 | 2014-11-14 | César Germán Rodríguez Robles |  |
| 179 | 1.13.4.11 | **Generar y Editar comisiones** |  | 1d | 2012-11-10 | 2012-11-10 |  | 40h |
| 180 | 1.13.4.11.1 | Ejecutar plan de pruebas | manual | 5d | 2014-11-24 | 2014-11-28 | César Germán Rodríguez Robles | 40h |
| 181 | 1.13.4.11.2 | Rgistro de bugs | milestone, manual | 0d | 2014-11-28 | 2014-11-28 | César Germán Rodríguez Robles |  |
| 182 | 1.13.4.11.3 | Actualización de plan de pruebas | milestone, manual | 0d | 2014-11-28 | 2014-11-28 | César Germán Rodríguez Robles |  |
| 183 | 1.13.4.12 | **Módulo de prioridades** |  | 1d | 2012-11-10 | 2012-11-10 |  | 40h |
| 184 | 1.13.4.12.1 | Ejecutar plan de pruebas | manual | 5d | 2014-11-17 | 2014-11-21 | César Germán Rodríguez Robles | 40h |
| 185 | 1.13.4.12.2 | Rgistro de bugs | milestone, manual | 0d | 2014-11-21 | 2014-11-21 | César Germán Rodríguez Robles |  |
| 186 | 1.13.4.12.3 | Actualización de plan de pruebas | milestone, manual | 0d | 2014-11-21 | 2014-11-21 | César Germán Rodríguez Robles |  |

| ID | WBS | Task | Type | Duration | Start | Finish | Resources | Work |
| --- | --- | --- | --- | --- | --- | --- | --- | --- |
| 187 | 1.13.4.13 | **Sistema de descuentos** |  | 1d | 2012-11-10 | 2012-11-10 |  | 40h |
| 188 | 1.13.4.13.1 | Ejecutar plan de pruebas | manual | 5d | 2014-12-01 | 2014-12-05 | César Germán Rodríguez Robles | 40h |
| 189 | 1.13.4.13.2 | Rgistro de bugs | milestone, manual | 0d | 2014-12-05 | 2014-12-05 | César Germán Rodríguez Robles |  |
| 190 | 1.13.4.13.3 | Actualización de plan de pruebas | milestone, manual | 0d | 2014-12-05 | 2014-12-05 | César Germán Rodríguez Robles |  |
| 191 | 1.13.4.14 | **Despliegue y evaluación de productos** |  | 1d | 2012-11-10 | 2012-11-10 |  | 40h |
| 192 | 1.13.4.14.1 | Ejecutar plan de pruebas | manual | 5d | 2014-12-15 | 2014-12-19 | César Germán Rodríguez Robles | 40h |
| 193 | 1.13.4.14.2 | Rgistro de bugs | milestone, manual | 0d | 2014-12-19 | 2014-12-19 | César Germán Rodríguez Robles |  |
| 194 | 1.13.4.14.3 | Actualización de plan de pruebas | milestone, manual | 0d | 2014-12-19 | 2014-12-19 | César Germán Rodríguez Robles |  |
| 195 | 1.13.4.15 | **Evaluación del producto** |  | 1d | 2012-11-10 | 2012-11-10 |  | 96h |
| 196 | 1.13.4.15.1 | Ejecutar plan de pruebas | manual | 12d | 2014-12-22 | 2015-01-06 | César Germán Rodríguez Robles | 96h |
| 197 | 1.13.4.15.2 | Rgistro de bugs | milestone, manual | 0d | 2015-01-06 | 2015-01-06 | César Germán Rodríguez Robles |  |
| 198 | 1.13.4.15.3 | Actualización de plan de pruebas | milestone, manual | 0d | 2015-01-06 | 2015-01-06 | César Germán Rodríguez Robles |  |
| 199 | 1.13.4.16 | **Módulo de estadísticas** |  | 1d | 2012-11-10 | 2012-11-10 |  | 48h |
| 200 | 1.13.4.16.1 | Ejecutar plan de pruebas | manual | 6d | 2015-01-13 | 2015-01-20 | César Germán Rodríguez Robles | 48h |
| 201 | 1.13.4.16.2 | Rgistro de bugs | milestone, manual | 0d | 2015-01-20 | 2015-01-20 | César Germán Rodríguez Robles |  |
| 202 | 1.13.4.16.3 | Actualización de plan de pruebas | milestone, manual | 0d | 2015-01-20 | 2015-01-20 | César Germán Rodríguez Robles |  |
| 203 | 1.13.4.17 | **Clientes sin actividad** |  | 1d | 2012-11-10 | 2012-11-10 |  | 96h |
| 204 | 1.13.4.17.1 | Ejecutar plan de pruebas | manual | 12d | 2015-01-28 | 2015-02-12 | César Germán Rodríguez Robles | 96h |
| 205 | 1.13.4.17.2 | Rgistro de bugs | milestone, manual | 0d | 2015-02-12 | 2015-02-12 | César Germán Rodríguez Robles |  |
| 206 | 1.13.4.17.3 | Actualización de plan de pruebas | milestone, manual | 0d | 2015-02-12 | 2015-02-12 | César Germán Rodríguez Robles |  |
| 207 | 1.13.4.18 | **Reportes del sistema de programación** |  | 1d | 2012-11-10 | 2012-11-10 |  | 64h |
| 208 | 1.13.4.18.1 | Ejecutar plan de pruebas | manual | 8d | 2015-02-24 | 2015-03-05 | César Germán Rodríguez Robles | 64h |
| 209 | 1.13.4.18.2 | Rgistro de bugs | milestone, manual | 0d | 2015-03-05 | 2015-03-05 | César Germán Rodríguez Robles |  |
| 210 | 1.13.4.18.3 | Actualización de plan de pruebas | milestone, manual | 0d | 2015-03-05 | 2015-03-05 | César Germán Rodríguez Robles |  |

| ID | WBS | Task | Type | Duration | Start | Finish | Resources | Work |
| --- | --- | --- | --- | --- | --- | --- | --- | --- |
| 211 | 1.13.4.19 | **Bloqueo interno** |  | 1d | 2012-11-10 | 2012-11-10 |  | 48h |
| 212 | 1.13.4.19.1 | Ejecutar plan de pruebas | manual | 6d | 2015-03-13 | 2015-03-20 | César Germán Rodríguez Robles | 48h |
| 213 | 1.13.4.19.2 | Rgistro de bugs | milestone, manual | 0d | 2015-03-20 | 2015-03-20 | César Germán Rodríguez Robles |  |
| 214 | 1.13.4.19.3 | Actualización de plan de pruebas | milestone, manual | 0d | 2015-03-20 | 2015-03-20 | César Germán Rodríguez Robles |  |
| 215 | 1.14 | Generar línea base Ingeniería | manual | 1d? | 2012-11-10 | 2012-11-10 |  |  |
| 216 | 1.15 | **Administración de Cambios** |  | 1d? | 2012-11-10 | 2012-11-10 |  |  |
| 217 | 1.15.1 | Ingresar solicitud de cambio | manual | 1d? | 2012-11-10 | 2012-11-10 |  |  |
| 218 | 1.15.2 | Estimar el cambio | manual | 1d? | 2012-11-10 | 2012-11-10 |  |  |
| 219 | 1.15.3 | Comunicar el cambio al equipo | manual | 1d? | 2012-11-10 | 2012-11-10 |  |  |
| 220 | 1.15.4 | **Modificar entregables** |  | 1d? | 2012-11-10 | 2012-11-10 |  |  |
| 221 | 1.15.4.1 | Generar listado de requerimientos del cambio | manual | 1d? | 2012-11-10 | 2012-11-10 |  |  |
| 222 | 1.15.4.2 | Generar estimación del cambio | manual | 1d? | 2012-11-10 | 2012-11-10 |  |  |
| 223 | 1.15.4.3 | Plan de Proyecto | manual | 1d? | 2012-11-10 | 2012-11-10 |  |  |
| 224 | 1.15.4.4 | Matriz de Rastreabilidad | manual | 1d? | 2012-11-10 | 2012-11-10 |  |  |
| 225 | 1.15.4.5 | Documento Funcional, Mockups y Flujo de Pantallas | manual | 1d? | 2012-11-10 | 2012-11-10 |  |  |
| 226 | 1.15.4.6 | Actualizar Plan de Pruebas | manual | 1d? | 2012-11-10 | 2012-11-10 |  |  |
| 227 | 1.15.4.7 | Actualizar Línea Base | manual | 1d? | 2012-11-10 | 2012-11-10 |  |  |
| 228 | 1.16 | **Medición, Análisis y Monitoreo** |  | 1d? | 2012-11-10 | 2012-11-10 |  | 89.55h |
| 229 | 1.16.1 | Monitoreo con el equipo | manual | 0.01d | 2014-07-21 | 2014-07-21 | César Germán Rodríguez Robles; Eduardo Rodríguez Velasco; Hansel Abraham Mendoza García; Jesús Alberto Durán Cobián; Salvador Almaraz Ayala; Víctor Manuel Gómez Zamoras; Yessica Alejandra Vacio Andalón | 0.5h |
| 230 | 1.16.2 | Monitoreo con el equipo | manual | 0.01d | 2014-07-28 | 2014-07-28 | César Germán Rodríguez Robles; Eduardo Rodríguez Velasco; Hansel Abraham Mendoza García; Jesús Alberto Durán Cobián; Salvador Almaraz Ayala; Víctor Manuel Gómez Zamoras; Yessica Alejandra Vacio Andalón | 0.5h |
| 231 | 1.16.3 | Monitoreo con el equipo | manual | 0.01d | 2014-08-04 | 2014-08-04 | César Germán Rodríguez Robles; Eduardo Rodríguez Velasco; Hansel Abraham Mendoza García; Jesús Alberto Durán Cobián; Salvador Almaraz Ayala; Víctor Manuel Gómez Zamoras; Yessica Alejandra Vacio Andalón | 0.5h |
| 232 | 1.16.4 | Monitoreo con el equipo | manual | 0.01d | 2014-08-11 | 2014-08-11 | César Germán Rodríguez Robles; Eduardo Rodríguez Velasco; Hansel Abraham Mendoza García; Jesús Alberto Durán Cobián; Salvador Almaraz Ayala; Víctor Manuel Gómez Zamoras; Yessica Alejandra Vacio Andalón | 0.5h |
| 233 | 1.16.5 | Monitoreo con el equipo | manual | 0.01d | 2014-08-18 | 2014-08-18 | César Germán Rodríguez Robles; Eduardo Rodríguez Velasco; Hansel Abraham Mendoza García; Jesús Alberto Durán Cobián; Salvador Almaraz Ayala; Víctor Manuel Gómez Zamoras; Yessica Alejandra Vacio Andalón | 0.5h |
| 234 | 1.16.6 | Monitoreo con el equipo | manual | 0.01d | 2014-08-25 | 2014-08-25 | César Germán Rodríguez Robles; Eduardo Rodríguez Velasco; Hansel Abraham Mendoza García; Jesús Alberto Durán Cobián; Salvador Almaraz Ayala; Víctor Manuel Gómez Zamoras; Yessica Alejandra Vacio Andalón | 0.5h |
| 235 | 1.16.7 | Monitoreo con el equipo | manual | 0.01d | 2014-09-01 | 2014-09-01 | César Germán Rodríguez Robles; Eduardo Rodríguez Velasco; Hansel Abraham Mendoza García; Jesús Alberto Durán Cobián; Salvador Almaraz Ayala; Víctor Manuel Gómez Zamoras; Yessica Alejandra Vacio Andalón | 0.5h |
| 236 | 1.16.8 | Monitoreo con el equipo | manual | 0.01d | 2014-09-08 | 2014-09-08 | César Germán Rodríguez Robles; Eduardo Rodríguez Velasco; Hansel Abraham Mendoza García; Jesús Alberto Durán Cobián; Salvador Almaraz Ayala; Víctor Manuel Gómez Zamoras; Yessica Alejandra Vacio Andalón | 0.5h |
| 237 | 1.16.9 | Monitoreo con el equipo | manual | 0.01d | 2014-09-15 | 2014-09-15 | César Germán Rodríguez Robles; Eduardo Rodríguez Velasco; Hansel Abraham Mendoza García; Jesús Alberto Durán Cobián; Salvador Almaraz Ayala; Víctor Manuel Gómez Zamoras; Yessica Alejandra Vacio Andalón | 0.5h |
| 238 | 1.16.10 | Monitoreo con el equipo | manual | 0.01d | 2014-09-22 | 2014-09-22 | César Germán Rodríguez Robles; Eduardo Rodríguez Velasco; Hansel Abraham Mendoza García; Jesús Alberto Durán Cobián; Salvador Almaraz Ayala; Víctor Manuel Gómez Zamoras; Yessica Alejandra Vacio Andalón | 0.5h |
| 239 | 1.16.11 | Monitoreo con el equipo | manual | 0.01d | 2014-09-29 | 2014-09-29 | César Germán Rodríguez Robles; Eduardo Rodríguez Velasco; Hansel Abraham Mendoza García; Jesús Alberto Durán Cobián; Salvador Almaraz Ayala; Víctor Manuel Gómez Zamoras; Yessica Alejandra Vacio Andalón | 0.5h |
| 240 | 1.16.12 | Monitoreo con el equipo | manual | 0.01d | 2014-10-06 | 2014-10-06 | César Germán Rodríguez Robles; Eduardo Rodríguez Velasco; Hansel Abraham Mendoza García; Jesús Alberto Durán Cobián; Salvador Almaraz Ayala; Víctor Manuel Gómez Zamoras; Yessica Alejandra Vacio Andalón | 0.5h |
| 241 | 1.16.13 | Monitoreo con el equipo | manual | 0.01d | 2014-10-13 | 2014-10-13 | César Germán Rodríguez Robles; Eduardo Rodríguez Velasco; Hansel Abraham Mendoza García; Jesús Alberto Durán Cobián; Salvador Almaraz Ayala; Víctor Manuel Gómez Zamoras; Yessica Alejandra Vacio Andalón | 0.5h |
| 242 | 1.16.14 | Monitoreo con el equipo | manual | 0.01d | 2014-10-20 | 2014-10-20 | César Germán Rodríguez Robles; Eduardo Rodríguez Velasco; Hansel Abraham Mendoza García; Jesús Alberto Durán Cobián; Salvador Almaraz Ayala; Víctor Manuel Gómez Zamoras; Yessica Alejandra Vacio Andalón | 0.5h |
| 243 | 1.16.15 | Monitoreo con el equipo | manual | 0.01d | 2014-10-27 | 2014-10-27 | César Germán Rodríguez Robles; Eduardo Rodríguez Velasco; Hansel Abraham Mendoza García; Jesús Alberto Durán Cobián; Salvador Almaraz Ayala; Víctor Manuel Gómez Zamoras; Yessica Alejandra Vacio Andalón | 0.5h |
| 244 | 1.16.16 | Monitoreo con el equipo | manual | 0.01d | 2014-11-03 | 2014-11-03 | César Germán Rodríguez Robles; Eduardo Rodríguez Velasco; Hansel Abraham Mendoza García; Jesús Alberto Durán Cobián; Salvador Almaraz Ayala; Víctor Manuel Gómez Zamoras; Yessica Alejandra Vacio Andalón | 0.5h |
| 245 | 1.16.17 | Monitoreo con el equipo | manual | 0.01d | 2014-11-10 | 2014-11-10 | César Germán Rodríguez Robles; Eduardo Rodríguez Velasco; Hansel Abraham Mendoza García; Jesús Alberto Durán Cobián; Salvador Almaraz Ayala; Víctor Manuel Gómez Zamoras; Yessica Alejandra Vacio Andalón | 0.5h |
| 246 | 1.16.18 | Monitoreo con el equipo | manual | 0.01d | 2014-11-17 | 2014-11-17 | César Germán Rodríguez Robles; Eduardo Rodríguez Velasco; Hansel Abraham Mendoza García; Jesús Alberto Durán Cobián; Salvador Almaraz Ayala; Víctor Manuel Gómez Zamoras; Yessica Alejandra Vacio Andalón | 0.5h |
| 247 | 1.16.19 | Monitoreo con el equipo | manual | 0.01d | 2014-11-24 | 2014-11-24 | César Germán Rodríguez Robles; Eduardo Rodríguez Velasco; Hansel Abraham Mendoza García; Jesús Alberto Durán Cobián; Salvador Almaraz Ayala; Víctor Manuel Gómez Zamoras; Yessica Alejandra Vacio Andalón | 0.5h |
| 248 | 1.16.20 | Monitoreo con el equipo | manual | 0.01d | 2014-12-01 | 2014-12-01 | César Germán Rodríguez Robles; Eduardo Rodríguez Velasco; Hansel Abraham Mendoza García; Jesús Alberto Durán Cobián; Salvador Almaraz Ayala; Víctor Manuel Gómez Zamoras; Yessica Alejandra Vacio Andalón | 0.5h |
| 249 | 1.16.21 | Monitoreo con el equipo | manual | 0.01d | 2014-12-08 | 2014-12-08 | César Germán Rodríguez Robles; Eduardo Rodríguez Velasco; Hansel Abraham Mendoza García; Jesús Alberto Durán Cobián; Salvador Almaraz Ayala; Víctor Manuel Gómez Zamoras; Yessica Alejandra Vacio Andalón | 0.5h |
| 250 | 1.16.22 | Monitoreo con el equipo | manual | 0.01d | 2014-12-15 | 2014-12-15 | César Germán Rodríguez Robles; Eduardo Rodríguez Velasco; Hansel Abraham Mendoza García; Jesús Alberto Durán Cobián; Salvador Almaraz Ayala; Víctor Manuel Gómez Zamoras; Yessica Alejandra Vacio Andalón | 0.5h |
| 251 | 1.16.23 | Monitoreo con el equipo | manual | 0.01d | 2014-12-22 | 2014-12-22 | César Germán Rodríguez Robles; Eduardo Rodríguez Velasco; Hansel Abraham Mendoza García; Jesús Alberto Durán Cobián; Salvador Almaraz Ayala; Víctor Manuel Gómez Zamoras; Yessica Alejandra Vacio Andalón | 0.5h |
| 252 | 1.16.24 | Monitoreo con el equipo | manual | 0.01d | 2014-12-29 | 2014-12-29 | César Germán Rodríguez Robles; Eduardo Rodríguez Velasco; Hansel Abraham Mendoza García; Jesús Alberto Durán Cobián; Salvador Almaraz Ayala; Víctor Manuel Gómez Zamoras; Yessica Alejandra Vacio Andalón | 0.5h |
| 253 | 1.16.25 | Monitoreo con el equipo | manual | 0.01d | 2015-01-05 | 2015-01-05 | César Germán Rodríguez Robles; Eduardo Rodríguez Velasco; Hansel Abraham Mendoza García; Jesús Alberto Durán Cobián; Salvador Almaraz Ayala; Víctor Manuel Gómez Zamoras; Yessica Alejandra Vacio Andalón | 0.5h |
| 254 | 1.16.26 | Monitoreo con el equipo | manual | 0.01d | 2015-01-12 | 2015-01-12 | César Germán Rodríguez Robles; Eduardo Rodríguez Velasco; Hansel Abraham Mendoza García; Jesús Alberto Durán Cobián; Salvador Almaraz Ayala; Víctor Manuel Gómez Zamoras; Yessica Alejandra Vacio Andalón | 0.5h |
| 255 | 1.16.27 | Monitoreo con el equipo | manual | 0.01d | 2015-01-19 | 2015-01-19 | César Germán Rodríguez Robles; Eduardo Rodríguez Velasco; Hansel Abraham Mendoza García; Jesús Alberto Durán Cobián; Salvador Almaraz Ayala; Víctor Manuel Gómez Zamoras; Yessica Alejandra Vacio Andalón | 0.5h |
| 256 | 1.16.28 | Monitoreo con el equipo | manual | 0.01d | 2015-01-26 | 2015-01-26 | César Germán Rodríguez Robles; Eduardo Rodríguez Velasco; Hansel Abraham Mendoza García; Jesús Alberto Durán Cobián; Salvador Almaraz Ayala; Víctor Manuel Gómez Zamoras; Yessica Alejandra Vacio Andalón | 0.5h |
| 257 | 1.16.29 | Monitoreo con el equipo | manual | 0.01d | 2015-02-09 | 2015-02-09 | César Germán Rodríguez Robles; Eduardo Rodríguez Velasco; Hansel Abraham Mendoza García; Jesús Alberto Durán Cobián; Salvador Almaraz Ayala; Víctor Manuel Gómez Zamoras; Yessica Alejandra Vacio Andalón | 0.5h |
| 258 | 1.16.30 | Monitoreo con el equipo | manual | 0.01d | 2015-02-16 | 2015-02-16 | César Germán Rodríguez Robles; Eduardo Rodríguez Velasco; Hansel Abraham Mendoza García; Jesús Alberto Durán Cobián; Salvador Almaraz Ayala; Víctor Manuel Gómez Zamoras; Yessica Alejandra Vacio Andalón | 0.5h |
| 259 | 1.16.31 | Monitoreo con el equipo | manual | 0.01d | 2015-02-23 | 2015-02-23 | César Germán Rodríguez Robles; Eduardo Rodríguez Velasco; Hansel Abraham Mendoza García; Jesús Alberto Durán Cobián; Salvador Almaraz Ayala; Víctor Manuel Gómez Zamoras; Yessica Alejandra Vacio Andalón | 0.5h |
| 260 | 1.16.32 | Monitoreo con el equipo | manual | 0.01d | 2015-03-02 | 2015-03-02 | César Germán Rodríguez Robles; Eduardo Rodríguez Velasco; Hansel Abraham Mendoza García; Jesús Alberto Durán Cobián; Salvador Almaraz Ayala; Víctor Manuel Gómez Zamoras; Yessica Alejandra Vacio Andalón | 0.5h |
| 261 | 1.16.33 | Monitoreo con el equipo | manual | 0.01d | 2015-03-09 | 2015-03-09 | César Germán Rodríguez Robles; Eduardo Rodríguez Velasco; Hansel Abraham Mendoza García; Jesús Alberto Durán Cobián; Salvador Almaraz Ayala; Víctor Manuel Gómez Zamoras; Yessica Alejandra Vacio Andalón | 1.5h |
| 262 | 1.16.34 | Recolectar métricas de proyecto | manual | 0.02d | 2014-07-25 | 2014-07-25 | Connie Larios Barragán; Jesús Alberto Durán Cobián; Yessica Alejandra Vacio Andalón | 2h |
| 263 | 1.16.35 | Presentación de Métricas a Dirección | manual | 0.02d | 2014-07-28 | 2014-07-28 | Connie Larios Barragán; Jesús Alberto Durán Cobián; Yessica Alejandra Vacio Andalón | 2h |
| 264 | 1.16.36 | Recolectar métricas de proyecto | manual | 0.02d | 2014-08-08 | 2014-08-08 | Connie Larios Barragán; Jesús Alberto Durán Cobián; Yessica Alejandra Vacio Andalón | 2h |
| 265 | 1.16.37 | Presentación de Métricas a Dirección | manual | 0.02d | 2014-08-11 | 2014-08-11 | Connie Larios Barragán; Jesús Alberto Durán Cobián; Yessica Alejandra Vacio Andalón | 2h |
| 266 | 1.16.38 | Recolectar métricas de proyecto | manual | 0.02d | 2014-08-22 | 2014-08-22 | Connie Larios Barragán; Jesús Alberto Durán Cobián; Yessica Alejandra Vacio Andalón | 2h |
| 267 | 1.16.39 | Presentación de Métricas a Dirección | manual | 0.02d | 2014-08-25 | 2014-08-25 | Connie Larios Barragán; Jesús Alberto Durán Cobián; Yessica Alejandra Vacio Andalón | 2h |
| 268 | 1.16.40 | Recolectar métricas de proyecto | manual | 0.02d | 2014-09-05 | 2014-09-05 | Connie Larios Barragán; Jesús Alberto Durán Cobián; Yessica Alejandra Vacio Andalón | 2h |
| 269 | 1.16.41 | Presentación de Métricas a Dirección | manual | 0.02d | 2014-09-08 | 2014-09-08 | Connie Larios Barragán; Jesús Alberto Durán Cobián; Yessica Alejandra Vacio Andalón | 2h |
| 270 | 1.16.42 | Recolectar métricas de proyecto | manual | 0.02d | 2014-09-19 | 2014-09-19 | Connie Larios Barragán; Jesús Alberto Durán Cobián; Yessica Alejandra Vacio Andalón | 2h |
| 271 | 1.16.43 | Presentación de Métricas a Dirección | manual | 0.02d | 2014-09-22 | 2014-09-22 | Connie Larios Barragán; Jesús Alberto Durán Cobián; Yessica Alejandra Vacio Andalón | 2h |
| 272 | 1.16.44 | Recolectar métricas de proyecto | manual | 0.02d | 2014-10-03 | 2014-10-03 | Connie Larios Barragán; Jesús Alberto Durán Cobián; Yessica Alejandra Vacio Andalón | 2h |
| 273 | 1.16.45 | Presentación de Métricas a Dirección | manual | 0.02d | 2014-10-06 | 2014-10-06 | Connie Larios Barragán; Jesús Alberto Durán Cobián; Yessica Alejandra Vacio Andalón | 2h |
| 274 | 1.16.46 | Recolectar métricas de proyecto | manual | 0.02d | 2014-10-17 | 2014-10-17 | Connie Larios Barragán; Jesús Alberto Durán Cobián; Yessica Alejandra Vacio Andalón | 2h |
| 275 | 1.16.47 | Presentación de Métricas a Dirección | manual | 0.02d | 2014-10-20 | 2014-10-20 | Connie Larios Barragán; Jesús Alberto Durán Cobián; Yessica Alejandra Vacio Andalón | 2h |
| 276 | 1.16.48 | Recolectar métricas de proyecto | manual | 0.02d | 2014-10-31 | 2014-10-31 | Connie Larios Barragán; Jesús Alberto Durán Cobián; Yessica Alejandra Vacio Andalón | 2h |
| 277 | 1.16.49 | Presentación de Métricas a Dirección | manual | 0.02d | 2014-11-03 | 2014-11-03 | Connie Larios Barragán; Jesús Alberto Durán Cobián; Yessica Alejandra Vacio Andalón | 2h |
| 278 | 1.16.50 | Recolectar métricas de proyecto | manual | 0.02d | 2014-11-14 | 2014-11-14 | Connie Larios Barragán; Jesús Alberto Durán Cobián; Yessica Alejandra Vacio Andalón | 2h |
| 279 | 1.16.51 | Presentación de Métricas a Dirección | manual | 0.02d | 2014-11-17 | 2014-11-17 | Connie Larios Barragán; Jesús Alberto Durán Cobián; Yessica Alejandra Vacio Andalón | 2h |
| 280 | 1.16.52 | Recolectar métricas de proyecto | manual | 0.02d | 2014-11-28 | 2014-11-28 | Connie Larios Barragán; Jesús Alberto Durán Cobián; Yessica Alejandra Vacio Andalón | 2h |

| ID | WBS | Task | Type | Duration | Start | Finish | Resources | Work |
| --- | --- | --- | --- | --- | --- | --- | --- | --- |
| 281 | 1.16.53 | Presentación de Métricas a Dirección | manual | 0.02d | 2014-12-01 | 2014-12-01 | Connie Larios Barragán; Jesús Alberto Durán Cobián; Yessica Alejandra Vacio Andalón | 2h |
| 282 | 1.16.54 | Recolectar métricas de proyecto | manual | 0.02d | 2014-12-12 | 2014-12-12 | Connie Larios Barragán; Jesús Alberto Durán Cobián; Yessica Alejandra Vacio Andalón | 2h |
| 283 | 1.16.55 | Presentación de Métricas a Dirección | manual | 0.02d | 2014-12-15 | 2014-12-15 | Connie Larios Barragán; Jesús Alberto Durán Cobián; Yessica Alejandra Vacio Andalón | 2h |
| 284 | 1.16.56 | Recolectar métricas de proyecto | manual | 0.02d | 2014-12-26 | 2014-12-26 | Connie Larios Barragán; Jesús Alberto Durán Cobián; Yessica Alejandra Vacio Andalón | 2h |
| 285 | 1.16.57 | Presentación de Métricas a Dirección | manual | 0.02d | 2014-12-29 | 2014-12-29 | Connie Larios Barragán; Jesús Alberto Durán Cobián; Yessica Alejandra Vacio Andalón | 2h |
| 286 | 1.16.58 | Recolectar métricas de proyecto | manual | 0.02d | 2015-01-09 | 2015-01-09 | Connie Larios Barragán; Jesús Alberto Durán Cobián; Yessica Alejandra Vacio Andalón | 2h |
| 287 | 1.16.59 | Presentación de Métricas a Dirección | manual | 0.02d | 2015-01-12 | 2015-01-12 | Connie Larios Barragán; Jesús Alberto Durán Cobián; Yessica Alejandra Vacio Andalón | 2h |
| 288 | 1.16.60 | Recolectar métricas de proyecto | manual | 0.02d | 2015-01-23 | 2015-01-23 | Connie Larios Barragán; Jesús Alberto Durán Cobián; Yessica Alejandra Vacio Andalón | 2h |
| 289 | 1.16.61 | Presentación de Métricas a Dirección | manual | 0.02d | 2015-01-26 | 2015-01-26 | Connie Larios Barragán; Jesús Alberto Durán Cobián; Yessica Alejandra Vacio Andalón | 2h |
| 290 | 1.16.62 | Recolectar métricas de proyecto | manual | 0.02d | 2015-06-26 | 2015-06-26 | Connie Larios Barragán; Jesús Alberto Durán Cobián; Yessica Alejandra Vacio Andalón | 2h |
| 291 | 1.16.63 | Presentación de Métricas a Dirección | manual | 0.02d | 2015-02-09 | 2015-02-09 | Connie Larios Barragán; Jesús Alberto Durán Cobián; Yessica Alejandra Vacio Andalón | 2h |
| 292 | 1.16.64 | Recolectar métricas de proyecto | manual | 0.02d | 2015-02-20 | 2015-02-20 | Connie Larios Barragán; Jesús Alberto Durán Cobián; Yessica Alejandra Vacio Andalón | 2h |
| 293 | 1.16.65 | Presentación de Métricas a Dirección | manual | 0.02d | 2015-02-23 | 2015-02-23 | Connie Larios Barragán; Jesús Alberto Durán Cobián; Yessica Alejandra Vacio Andalón | 2h |
| 294 | 1.16.66 | Recolectar métricas de proyecto | manual | 0.02d | 2015-03-06 | 2015-03-06 | Connie Larios Barragán; Jesús Alberto Durán Cobián; Yessica Alejandra Vacio Andalón | 2h |
| 295 | 1.16.67 | Presentación de Métricas a Dirección | manual | 0.02d | 2015-03-09 | 2015-03-09 | Connie Larios Barragán; Jesús Alberto Durán Cobián; Yessica Alejandra Vacio Andalón | 2h |
| 296 | 1.16.68 | Recolectar métricas de proyecto | manual | 0.02d | 2015-03-20 | 2015-03-20 | Connie Larios Barragán; Jesús Alberto Durán Cobián; Yessica Alejandra Vacio Andalón | 2h |
| 297 | 1.16.69 | Presentación de Métricas a Dirección | manual | 0.02d | 2015-03-23 | 2015-03-23 | Connie Larios Barragán; Jesús Alberto Durán Cobián; Yessica Alejandra Vacio Andalón | 2h |
| 298 | 1.17 | **Cierre** |  | 1d? | 2012-11-10 | 2012-11-10 |  | 3h |
| 299 | 1.17.1 | Cierre formal del proyecto | manual | 1d | 2015-03-27 | 2015-03-27 | César Germán Rodríguez Robles; Eduardo Rodríguez Velasco; Hansel Abraham Mendoza García; Jesús Alberto Durán Cobián; Víctor Manuel Gómez Zamoras; Yessica Alejandra Vacio Andalón | 1h |
| 300 | 1.17.2 | Realizar encuesta de satisfacción al cliente | manual | 1d | 2015-03-27 | 2015-03-27 | César Germán Rodríguez Robles; Eduardo Rodríguez Velasco; Hansel Abraham Mendoza García; Jesús Alberto Durán Cobián; Víctor Manuel Gómez Zamoras; Yessica Alejandra Vacio Andalón | 1h |
| 301 | 1.17.3 | Lecciones aprendidas | manual | 1d | 2015-03-27 | 2015-03-27 | César Germán Rodríguez Robles; Eduardo Rodríguez Velasco; Hansel Abraham Mendoza García; Jesús Alberto Durán Cobián; Víctor Manuel Gómez Zamoras; Yessica Alejandra Vacio Andalón | 1h |
| 302 | 1.18 | Generar línea base Cierre | manual | 1d? | 2012-11-10 | 2012-11-10 |  |  |
